# MEJORAMIENTO DE LA RED DE AGUA POTABLE DE LA CALLE SUECIA

Schedule from MS Project, 2017-12-01 to 2018-01-05, costs in S/..
Construcción

## Calendars

- Estándar: Mon-Fri 09:00-13:00, 15:00-19:00; Sat-Sun off. Exceptions (off unless hours are given): 2017-12-09 09:00-13:00, 15:00-19:00.

## Schedule

| ID | WBS | Task | Type | Duration | Start | Finish | Predecessors | Total slack | Constraint | Cost |
| --- | --- | --- | --- | --- | --- | --- | --- | --- | --- | --- |
| 1 | 1 | **PROYECTO MEJORAMIENTO RED DE AGUA POTABLE DE LA CALLE SUECIA-CUSCO** |  | 27d | 2017-12-01 | 2018-01-05 |  | 0d |  | 94,819 |
| 2 | 1.1 | **OBRAS PROVISIONALES** |  | 27d | 2017-12-01 | 2018-01-05 |  | 0d |  | 850 |
| 3 | 1.1.1 | INICIO DE ACTIVIDADES | milestone | 0d | 2017-12-01 | 2017-12-01 |  | 27d |  |  |
| 4 | 1.1.2 | CARTEL DE IDENTIFICACION DE LA OBRA DE 3.60X2.40M | manual | 1d | 2017-12-01 | 2017-12-01 |  |  |  | 350 |
| 5 | 1.1.3 | ALMACEN | manual | 27d | 2017-12-01 | 2018-01-05 |  |  | start no earlier than 2017-12-01 | 500 |
| 6 | 1.2 | **GESTION DE RIESGOS** |  | 1d | 2017-12-01 | 2017-12-01 |  | 0d |  | 594.99 |
| 7 | 1.2.1 | INICIO DE LA GESTION DE RIESGOS | milestone | 0d | 2017-12-01 | 2017-12-01 |  | 27d |  |  |
| 8 | 1.2.2 | TRANQUERAS DE MADERA 1.20X1.10M P/DESVIO TRANSITO VEHICULAR | manual | 1d | 2017-12-01 | 2017-12-01 | 4SS |  |  | 348.6 |
| 9 | 1.2.3 | CINTA DE SEGURIDAD | manual | 1d | 2017-12-01 | 2017-12-01 | 4SS |  |  | 174.9 |
| 10 | 1.2.4 | AGUA PARA HUMEDECER EL TERRENO | manual | 1d | 2017-12-01 | 2017-12-01 | 4SS |  |  | 1.05 |
| 11 | 1.2.5 | PUENTES PEATONALES PROVISIONALES | manual | 1d | 2017-12-01 | 2017-12-01 | 4SS |  |  | 70.44 |
| 12 | 1.2.6 | FINAL DE LA GESTION DE RIESGOS | milestone | 0d | 2017-12-01 | 2017-12-01 | 11 | 26d |  |  |
| 13 | 1.3 | **TRABAJOS PRELIMINARES** |  | 18d | 2017-12-04 | 2017-12-27 |  | 0d |  | 37,215.63 |
| 14 | 1.3.1 | INICIO TRABAJOS PRELIMINARES | milestone | 0d | 2017-12-04 | 2017-12-04 |  | 26d | start no earlier than 2017-12-04 |  |
| 15 | 1.3.2 | TRAZO, NIVELACION Y REPLANTEO | manual | 3d | 2017-12-04 | 2017-12-06 | 4 |  | start no earlier than 2017-12-04 | 214.5 |
| 16 | 1.3.3 | TRAZO, NIVELACION Y REPLANTEO DURANTE LA EJECUCION | manual | 10d | 2017-12-07 | 2017-12-19 | 15 |  |  | 386.1 |
| 17 | 1.3.4 | DESMONTAJE DE PAVIMENTO SEMIFLEXIBLE(ADOQUINADO) | manual | 6d | 2017-12-07 | 2017-12-13 | 15 |  |  | 3,649.14 |
| 18 | 1.3.5 | REPOSICION DE PAVIMENTO SEMIFLEXIBLE(ADOQUINADO) | manual | 4d | 2017-12-21 | 2017-12-26 | 46, 20SF |  | start no earlier than 2017-12-22 | 32,836.32 |
| 19 | 1.3.6 | PIQUES EN EMPALMES | manual | 3d | 2017-12-11 | 2017-12-13 | 23 |  |  | 129.57 |
| 20 | 1.3.7 | FIN DE T.PRELIMINARES | milestone, manual | 0d | 2017-12-27 | 2017-12-27 |  |  |  |  |
| 21 | 1.4 | **MOVIMIENTO DE TIERRAS** |  | 15d | 2017-12-08 | 2017-12-28 |  | 0d |  | 20,429.04 |
| 22 | 1.4.1 | INICIO DE MOVIMIENTO DE TIERRAS | milestone, manual | 0d | 2017-12-08 | 2017-12-08 |  |  |  |  |
| 23 | 1.4.2 | EXCAVACION MANUAL DE TERRENO COMPACTO P/TUB. Ø 110 mm , H=1.20 | manual | 10d | 2017-12-08 | 2017-12-20 | 17 |  | start no earlier than 2017-12-08 | 11,876.7 |
| 24 | 1.4.3 | REFINE Y NIV. ZANJA T.N. PARA TUB. 110 MM. | manual | 3d | 2017-12-11 | 2017-12-13 | 23 |  |  | 567.6 |
| 25 | 1.4.4 | COMPACTACION DE FONDO DE ZANJA T.C. P/TUB. 110MM. H=0.10 (PREVIO A CAMA DE APOYO) | manual | 3d | 2017-12-12 | 2017-12-14 | 24 |  |  | 1,174.8 |
| 26 | 1.4.5 | CAMA DE APOYO P/TUB Ø 110MM. | manual | 3d | 2017-12-15 | 2017-12-19 | 25 |  |  | 2,006.4 |
| 27 | 1.4.6 | RELLENO COMPAC. ZANJAS P/TUB.110 MM. H=1.20m. | manual | 3d | 2017-12-15 | 2017-12-19 |  |  |  | 3,544.2 |
| 28 | 1.4.7 | ELIMINACION MATERIAL EXCEDENTE HASTA 30.00 MT (A MANO USANDO CARRETILLA) | manual | 4d | 2017-12-20 | 2017-12-25 | 27 |  |  | 446.16 |
| 29 | 1.4.8 | ELIMINACION DE DESMONTE | manual | 2d | 2017-12-26 | 2017-12-27 | 28, 30SF |  |  | 813.18 |
| 30 | 1.4.9 | FINAL DE MOVIMIENTO DE TIERRAS | milestone, manual | 0d | 2017-12-28 | 2017-12-28 |  |  |  |  |

| ID | WBS | Task | Type | Duration | Start | Finish | Predecessors | Total slack | Cost |
| --- | --- | --- | --- | --- | --- | --- | --- | --- | --- |
| 31 | 1.5 | **TUBERIAS Y ACCESORIOS** |  | 2d | 2017-12-04 | 2017-12-05 |  | 0d | 14,969.24 |
| 32 | 1.5.1 | ADQUISICIÓN DE TUBERIAS Y ACCESORIOS | milestone, manual | 0d | 2017-12-04 | 2017-12-04 |  |  |  |
| 33 | 1.5.2 | TUBERIAS PVC P/AGUA DN 110 MM C-10 U.F. | manual | 2d | 2017-12-04 | 2017-12-05 | 5 |  | 13,447.5 |
| 34 | 1.5.3 | ACCESORIOS P/TUB AGUA POTABLE DE 110 MM | manual | 2d | 2017-12-04 | 2017-12-05 | 5 |  | 666.86 |
| 35 | 1.5.4 | VALVULA COMPUERTA H.D. ISO 7259 DE 110MM | manual | 2d | 2017-12-04 | 2017-12-05 | 5 |  | 854.88 |
| 36 | 1.6 | **INSTALACIONES DE TUBERIAS Y ACCESORIOS** |  | 4d | 2017-12-14 | 2017-12-20 |  | 0d | 3,179.88 |
| 37 | 1.6.1 | INICIO DE INSTACIONES DE TUB. Y ACC. | milestone, manual | 0d | 2017-12-14 | 2017-12-14 |  |  |  |
| 38 | 1.6.2 | INSTALACION DE TUBERIAS PVC P/AGUA DN 110 MM C-10 U.F. | manual | 3d | 2017-12-14 | 2017-12-17 | 26 |  | 924 |
| 39 | 1.6.3 | INSTALAC. DE ACCESORIOS P/TUB AGUA POTABLE DE 110 MM | manual | 2d | 2017-12-15 | 2017-12-18 | 24 |  | 82.26 |
| 40 | 1.6.4 | INSTALACION VALVULA COMPUERTA H.D. ISO 7259 DE 110MM | manual | 2d | 2017-12-18 | 2017-12-19 | 35 |  | 274.12 |
| 41 | 1.6.5 | EMPALME DE TUBERIA A RED EXISTENTE | manual | 2d | 2017-12-18 | 2017-12-19 | 24, 42SF |  | 1,899.5 |
| 42 | 1.6.6 | FIN DE INSTALACIONES DE TUB. Y ACC. | milestone, manual | 0d | 2017-12-20 | 2017-12-20 |  |  |  |
| 43 | 1.7 | **ANCLAJE DADOS DE CONCRETO** |  | 2d | 2017-12-18 | 2017-12-19 |  | 0d | 329.7 |
| 44 | 1.7.1 | MACIZO DE ANCLAJE F´c= 140 Kg/cm2 0.40x0.4x0.40 m. | manual | 2d | 2017-12-18 | 2017-12-19 | 39 |  | 329.7 |
| 45 | 1.8 | **PRUEBA HIDRÁULICA Y DESINFECCIÓN** |  | 3d | 2017-12-15 | 2017-12-19 |  | 0d | 889.44 |
| 46 | 1.8.1 | PRUEBA A ZANJA TAPADA P/TUBERIA DESAGUE DE 200 MM. | manual | 3d | 2017-12-15 | 2017-12-19 | 27 |  | 889.44 |
| 47 | 1.9 | **REPOSICION DE CONEXIONES DE DESAGUE** |  | 6d | 2017-12-21 | 2017-12-28 |  | 0d | 9,292.68 |
| 48 | 1.9.1 | RECONEXION DE SERVICIOS | milestone, manual | 0d | 2017-12-21 | 2017-12-21 |  |  |  |
| 49 | 1.9.2 | REPOSICION DE CONEXION DOMICILIARIA | manual | 4d | 2017-12-23 | 2017-12-27 | 50 |  | 6,365.23 |
| 50 | 1.9.3 | DEMOLICION DE VEREDA DE CONCRETO PARA REPOSICIONES | manual | 5d | 2017-12-21 | 2017-12-27 |  |  | 443.42 |
| 51 | 1.9.4 | REPOSICION DE VEREDA DE CONCRETO PARA REPOSICION DE CONEXIONES | manual | 4d | 2017-12-25 | 2017-12-28 | 49, 52SF |  | 2,484.03 |
| 52 | 1.9.5 | FINALIZACIÓN DE RECONEXIONES | milestone, manual | 0d | 2017-12-28 | 2017-12-28 |  |  |  |
| 53 | 1.10 | **OTROS** |  | 22d | 2017-12-01 | 2017-12-29 |  | 0d | 7,068.4 |
| 54 | 1.10.1 | TRABAJOS ADICIONALES | milestone, manual | 0d | 2017-12-01 | 2017-12-01 |  |  |  |
| 55 | 1.10.2 | LIMPIEZA GENERAL DE LA OBRA | manual | 2d | 2017-12-28 | 2017-12-29 | 28 |  | 181.5 |
| 56 | 1.10.3 | PUESTA EN OPERACION EL SISTEMA | manual | 1d | 2017-12-29 | 2017-12-29 | 28 |  | 636.9 |
| 57 | 1.10.4 | MONITOREO ARQUEOLOGICO | manual | 22d | 2017-12-01 | 2017-12-29 | 23 |  | 6,250 |
| 58 | 1.10.5 | FIN DEL PROYECTO | milestone, manual | 0d | 2017-12-29 | 2017-12-29 | 57SF |  |  |
