# CRONOGRAMA DE OBRA_NOC

Schedule from MS Project, 2017-07-31 to 2017-10-28, status date 2017-08-07, costs in S/., A marks actual dates.
Hewlett-Packard

## Calendars

- Estándar: Mon 07:30-12:00, 13:00-16:00; Tue-Fri 07:30-12:00, 13:00-17:00; Sat-Sun 07:30-12:00, 13:00-16:00.

## Schedule

| ID | WBS | Task | Type | Duration | Start | Finish | Predecessors | Complete | Remaining | Total slack | Free slack | Cost | Actual cost |
| --- | --- | --- | --- | --- | --- | --- | --- | --- | --- | --- | --- | --- | --- |
| 1 | 1 | INICIO DE OBRA | milestone | 0d | 2017-07-31 A | 2017-07-31 A |  | 100% |  |  |  |  |  |
| 2 | 2 | **OBRAS PROVISIONALES Y PRELIMINARES** |  | 90d | 2017-07-31 A | 2017-10-28 |  | 12% | 79.02d | 0d |  | 33,615.78 | 17,717.03 |
| 3 | 2.1 | **PARTIDAS PROVISIONALES** |  | 90d | 2017-07-31 A | 2017-10-28 |  | 11% | 80.4d | 0d |  | 8,300 | 3,022 |
| 4 | 2.1.1 | Seguridad, Salud y Medio Ambiente durante obra |  | 90d | 2017-07-31 A | 2017-10-28 | 1SS | 9% | 82.19d | 0d |  | 5,800 | 522 |
| 5 | 2.1.2 | Almacen y Oficina Técnica |  | 2d | 2017-07-31 A | 2017-08-02 A | 4FS-90d | 100% |  |  |  | 2,500 | 2,500 |
| 6 | 2.2 | **PARTIDAS PRELIMINARES** |  | 89.81d | 2017-07-31 A | 2017-10-28 |  | 13% | 78.15d | 0.19d |  | 25,315.78 | 14,695.03 |
| 7 | 2.2.1 | CERRAMIENTO PROVISIONAL DE TRIPLAY, DRYWALL (H=4.50m) |  | 2d | 2017-07-31 A | 2017-08-02 A | 5FS-2d | 100% |  |  |  | 1,200 | 1,200 |
| 8 | 2.2.2 | Servicios Higiénicos Provisionales DISAL o similar |  | 1d | 2017-08-02 A | 2017-08-03 A | 7 | 100% |  |  |  | 1,500 | 1,500 |
| 9 | 2.2.3 | Guardiania en Obra |  | 89d | 2017-07-31 A | 2017-10-27 | 8FS-3d | 9% | 81.19d | 1d |  | 6,600 | 594 |
| 10 | 2.2.4 | Movilización y desmovilización de personal y equipos |  | 4d | 2017-07-31 A | 2017-10-28 | 9FS-90d | 47% | 2.12d | 0.19d | 0d | 2,195 | 1,031.65 |
| 11 | 2.2.5 | Transporte de materiales a obra |  | 60d | 2017-08-06 A | 2017-10-20 | 10FS-83d | 2% | 59d | 8.12d |  | 2,950 | 59 |
| 12 | 2.2.6 | Corte de terreno con pendiente de hasta 1.5m por 10 m |  | 3d | 2017-08-04 A | 2017-08-07 A | 13 | 100% |  |  |  | 7,183.93 | 7,183.93 |
| 13 | 2.2.7 | Limpieza, desbroce de terreno manual |  | 2d | 2017-08-02 A | 2017-08-04 A | 11FS-80d, 10SS+2d | 100% |  |  |  | 2,949.48 | 2,949.48 |
| 14 | 2.2.8 | Trazo, niveles y replanteo preliminar |  | 20d | 2017-08-03 A | 2017-09-12 | 13FS-1d | 24% | 15.19d | 2.88d | 2.06d | 737.37 | 176.97 |
| 15 | 3 | **MOVIMIENTO DE TIERRA** |  | 81.19d | 2017-08-07 A | 2017-10-26 |  | 3% | 79.02d | 1.81d |  | 13,294.15 | 106.43 |
| 16 | 3.1 | Excavacion de p/zapatas suelo Intermedio. |  | 8d | 2017-08-07 A | 2017-08-15 | 14FS-39d, 12 | 10% | 7.19d | 0d |  | 280.8 | 28.08 |
| 17 | 3.2 | Excavacion de zanjas p/cimientos corridos suelo Intermedio. |  | 10d | 2017-08-13 | 2017-08-22 | 16FS-2d |  |  | 14d | 0d | 3,717 |  |
| 18 | 3.3 | Relleno compactado con material propio |  | 7d | 2017-08-19 | 2017-08-26 | 25FS-6d |  |  | 14d | 0d | 1,274.75 |  |
| 19 | 3.4 | Relleno compactado con material de prestamo |  | 8d | 2017-08-21 | 2017-08-28 | 18FS-6d |  |  | 14d | 0d | 5,409.8 |  |
| 20 | 3.5 | Eliminacion de Desmonte |  | 28d | 2017-08-08 A | 2017-10-26 | 16SS+1d | 3% | 27.19d | 1.81d |  | 2,611.8 | 78.35 |
| 21 | 4 | **ESTRUCTURAS** |  | 56d | 2017-08-13 | 2017-10-07 |  |  |  | 0d |  | 117,305.5 |  |
| 22 | 4.1 | **CONCRETO SIMPLE** |  | 13d | 2017-08-13 | 2017-08-25 |  |  |  | 0d |  | 11,442.6 |  |
| 23 | 4.1.1 | Concreto de solado C:H-1:12, e=2" |  | 7d | 2017-08-13 | 2017-08-19 | 16FS-2d |  |  | 0d |  | 238.5 |  |
| 24 | 4.1.2 | Concreto ciclópeo p/Cimientos Corridos 1:10 + 30% PG |  | 7d | 2017-08-17 | 2017-08-24 | 17FS-5d |  |  | 14d | 0d | 1,202.5 |  |
| 25 | 4.1.3 | Concreto ciclópeo p/Cimientos Corridos 1:8 + 25% PG |  | 5d | 2017-08-21 | 2017-08-25 | 24FS-4d |  |  | 14d | 0d | 10,001.6 |  |

| ID | WBS | Task | Duration | Start | Finish | Predecessors | Total slack | Free slack | Cost |
| --- | --- | --- | --- | --- | --- | --- | --- | --- | --- |
| 26 | 4.2 | **CONCRETO ARMADO** | 55d | 2017-08-14 | 2017-10-07 |  | 0d |  | 105,862.9 |
| 27 | 4.2.1 | **ZAPATAS** | 23d | 2017-08-14 | 2017-09-05 |  | 0d |  | 2,191.93 |
| 28 | 4.2.1.1 | Concreto 210 kg/cm2 | 18d | 2017-08-18 | 2017-09-05 | 30FS-17d | 0d |  | 1,032 |
| 29 | 4.2.1.2 | Acero 4200 kg/cm2 Grado 60 | 20d | 2017-08-14 | 2017-09-02 | 23FS-6d | 0d |  | 895.93 |
| 30 | 4.2.1.3 | Encofrado y desencofrado | 18d | 2017-08-17 | 2017-09-04 | 29FS-16d | 0d |  | 264 |
| 31 | 4.2.2 | **SOBRECIMIENTO** | 20d | 2017-08-16 | 2017-09-04 |  | 14d |  | 28,574.37 |
| 32 | 4.2.2.1 | Concreto 210 kg/cm2 | 16d | 2017-08-19 | 2017-09-04 | 34FS-15d | 14d | 0d | 9,743.8 |
| 33 | 4.2.2.2 | Acero 4200 kg/cm2 Grado 60 | 18d | 2017-08-16 | 2017-09-02 | 19FS-13d | 14d | 0d | 9,901.67 |
| 34 | 4.2.2.3 | Encofrado y desencofrado | 16d | 2017-08-18 | 2017-09-03 | 33FS-15d | 14d | 0d | 8,928.9 |
| 35 | 4.2.3 | **COLUMNAS** | 25d | 2017-08-21 | 2017-09-14 |  | 0d |  | 23,957.45 |
| 36 | 4.2.3.1 | Concreto 210 kg/cm2 | 19d | 2017-08-26 | 2017-09-14 | 38FS-18d | 0d |  | 5,336.3 |
| 37 | 4.2.3.2 | Acero 4200 kg/cm2 Grado 60 | 23d | 2017-08-21 | 2017-09-12 | 28FS-16d | 0d |  | 10,251.25 |
| 38 | 4.2.3.3 | Encofrado y desencofrado | 19d | 2017-08-25 | 2017-09-13 | 37FS-18d | 0d |  | 8,369.9 |
| 39 | 4.2.4 | **VIGAS** | 20d | 2017-09-04 | 2017-09-24 |  | 0d |  | 21,619.13 |
| 40 | 4.2.4.1 | Concreto 210 kg/cm2 | 1d | 2017-09-23 | 2017-09-24 | 42FS+3d | 28d | 0d | 5,740.5 |
| 41 | 4.2.4.2 | Acero 4200 kg/cm2 Grado 60 | 13d | 2017-09-04 | 2017-09-17 | 36FS-10d | 0d |  | 7,261.23 |
| 42 | 4.2.4.3 | Encofrado y desencofrado | 8d | 2017-09-12 | 2017-09-20 | 41FS-5d | 28d | 0d | 8,617.4 |
| 43 | 4.2.5 | **LOSA ALIGERADA** | 14d | 2017-09-13 | 2017-09-27 |  | 0d |  | 16,777.29 |
| 44 | 4.2.5.1 | Concreto 210 kg/cm2 | 1d | 2017-09-21 | 2017-09-22 | 45 | 30d | 2d | 4,742.9 |
| 45 | 4.2.5.2 | Acero 4200 kg/cm2 Grado 60 | 8d | 2017-09-13 | 2017-09-21 | 41FS-4d | 0d |  | 2,501.31 |
| 46 | 4.2.5.3 | Encofrado y desencofrado | 9d | 2017-09-14 | 2017-09-27 | 45SS+1d, 4SS | 0d |  | 6,921.75 |
| 47 | 4.2.5.4 | Ladrillo arcilla para techo 15x30x30 cm | 1d | 2017-09-20 | 2017-09-21 | 45FS-1d | 29d | 6d | 2,611.33 |
| 48 | 4.2.6 | **LOSAS MACIZA** | 3d | 2017-09-27 | 2017-09-30 |  | 23d |  | 714.92 |
| 49 | 4.2.6.1 | Concreto 210 kg/cm2 | 1d | 2017-09-29 | 2017-09-30 | 51 | 23d | 2d | 344 |
| 50 | 4.2.6.2 | Acero 4200 kg/cm2 Grado 60 | 1d | 2017-09-27 | 2017-09-28 | 46, 47 | 23d | 0d | 141.02 |
| 51 | 4.2.6.3 | Encofrado y desencofrado | 1d | 2017-09-28 | 2017-09-29 | 50 | 23d | 0d | 229.9 |

| ID | WBS | Task | Duration | Start | Finish | Predecessors | Total slack | Free slack | Cost |
| --- | --- | --- | --- | --- | --- | --- | --- | --- | --- |
| 52 | 4.2.7 | **LOSAS VARIAS** | 5d | 2017-09-27 | 2017-10-02 |  | 21d |  | 6,001.73 |
| 53 | 4.2.7.1 | Concreto 210 kg/cm2 | 1d | 2017-10-01 | 2017-10-02 | 55, 49FF | 21d | 0d | 2,807.9 |
| 54 | 4.2.7.2 | Acero 4200 kg/cm2 Grado 60 | 2d | 2017-09-27 | 2017-09-29 | 46 | 21d | 0d | 1,596.63 |
| 55 | 4.2.7.3 | Encofrado y desencofrado | 2d | 2017-09-29 | 2017-10-01 | 54 | 21d | 0d | 1,597.2 |
| 56 | 4.2.8 | **MURETE o BUZON** | 5d | 2017-10-02 | 2017-10-07 |  | 21d |  | 6,026.08 |
| 57 | 4.2.8.1 | Concreto 175 kg/cm2 | 1d | 2017-10-06 | 2017-10-07 | 59 | 21d |  | 1,414 |
| 58 | 4.2.8.2 | Acero 4200 kg/cm2 Grado 60 | 2d | 2017-10-02 | 2017-10-04 | 53 | 21d | 0d | 592.68 |
| 59 | 4.2.8.3 | Encofrado y desencofrado | 2d | 2017-10-04 | 2017-10-06 | 58 | 21d | 0d | 4,019.4 |
| 60 | 5 | **ARQUITECTURA** | 83.12d | 2017-08-07 | 2017-10-28 |  | 0d |  | 119,644.71 |
| 61 | 5.1 | **MUROS** | 20d | 2017-08-25 | 2017-09-14 |  | 14d |  | 26,033.4 |
| 62 | 5.1.1 | Muro de soga lad. KK 18h - caravista | 20d | 2017-08-25 | 2017-09-14 | 32FS-10d | 14d | 0d | 22,324.8 |
| 63 | 5.1.2 | Muro de cabeza lad. KK 18h - caravista | 4d | 2017-09-08 | 2017-09-12 | 62FS-6d | 16d | 0d | 3,163.6 |
| 64 | 5.1.3 | Muro de canto lad. KK 18h - caravista | 2d | 2017-09-12 | 2017-09-14 | 63, 37 | 16d |  | 545 |
| 65 | 5.2 | **REVOQUES Y ENLUCIDOS** | 12d | 2017-09-27 | 2017-10-09 |  | 0d |  | 19,360.99 |
| 66 | 5.2.1 | Tarrajeo Primario y rayado C:A-1:5 e=1.5cm | 2d | 2017-10-07 | 2017-10-09 | 67FS-2d | 0d |  | 351.9 |
| 67 | 5.2.2 | Tarrajeos C:A-1:5 e=1.5cm | 9d | 2017-09-30 | 2017-10-09 | 68FS-8d, 64 | 0d |  | 13,611.73 |
| 68 | 5.2.3 | Cielo raso C:A-1:5 e=1.5cm | 11d | 2017-09-27 | 2017-10-08 | 46 | 0d |  | 4,116.96 |
| 69 | 5.2.4 | Suministro e instalacion de AcabadoGraniplast | 3d | 2017-10-05 | 2017-10-08 | 67FS-4d | 20d |  | 1,280.4 |
| 70 | 5.3 | **CIELORASO** | 9d | 2017-10-14 | 2017-10-23 |  | 5d |  | 12,117.9 |
| 71 | 5.3.1 | Suministro e instalación de Baldosas | 6d | 2017-10-17 | 2017-10-23 | 72FS-5d | 5d |  | 10,836.1 |
| 72 | 5.3.2 | Suministro e Instalacion de Drywall para muros e=12mm | 8d | 2017-10-14 | 2017-10-22 | 75FS-5d | 5d | 0d | 1,281.8 |
| 73 | 5.4 | **PINTURA** | 13d | 2017-10-07 | 2017-10-20 |  | 5d |  | 8,935.78 |
| 74 | 5.4.1 | Pintura Latex Satinado en elementos de concreto (MUROS) | 12d | 2017-10-08 | 2017-10-20 | 81FS-3d | 5d | 0d | 7,900.2 |
| 75 | 5.4.2 | Pintura Latex Satinado en elementos de concreto (CIELO RASO) | 12d | 2017-10-07 | 2017-10-19 | 74FS-13d | 5d | 0d | 1,035.58 |

| ID | WBS | Task | Duration | Start | Finish | Predecessors | Total slack | Free slack | Cost |
| --- | --- | --- | --- | --- | --- | --- | --- | --- | --- |
| 76 | 5.5 | **PISOS** | 73.12d | 2017-08-07 | 2017-10-18 |  | 10d |  | 15,114.77 |
| 77 | 5.5.1 | Suministro e instalacion de Piso de Porcelanato 60 x 60 Beige | 8d | 2017-10-06 | 2017-10-14 | 81FS-5d | 10d | 0d | 6,076.8 |
| 78 | 5.5.2 | Contrazocalo H=10cm | 7d | 2017-10-09 | 2017-10-16 | 77FS-5d | 10d | 0d | 1,060.08 |
| 79 | 5.5.3 | Contrazocalo cemento pulido H=10cm | 6d | 2017-10-12 | 2017-10-18 | 78FS-4d | 10d |  | 269.7 |
| 80 | 5.5.4 | Zocalo | 0.94d | 2017-08-07 | 2017-08-07 |  | 82.19d |  | 704.6 |
| 81 | 5.5.5 | Contrapiso e=4cm, base 3cm C:H-1:5 acab 1cm pasta 1:2 | 8d | 2017-10-03 | 2017-10-11 | 66FS-6d | 0d |  | 3,771.31 |
| 82 | 5.5.6 | Cemento Pulido | 2d | 2017-10-11 | 2017-10-13 | 81 | 11d | 0d | 937.62 |
| 83 | 5.5.7 | Grass para estacionamiento | 5d | 2017-10-09 | 2017-10-14 | 82FS-4d | 11d | 0d | 994.66 |
| 84 | 5.5.8 | Suministro e Instalacion de Botallantas | 2d | 2017-10-14 | 2017-10-16 | 83 | 11d | 0d | 1,080 |
| 85 | 5.5.9 | Suministro e Instalacion de cantoneras para escalera | 1d | 2017-10-16 | 2017-10-17 | 84, 47FF | 11d |  | 220 |
| 86 | 5.6 | **CARPINTERIA METALICA** | 19d | 2017-10-04 | 2017-10-23 |  | 0d |  | 10,553.85 |
| 87 | 5.6.1 | Instalación de Puerta Metálica Batiente doble hoja de 2.60mts x 2.40mts (P8) | 2d | 2017-10-04 | 2017-10-06 | 67SS+4d | 0d |  | 550 |
| 88 | 5.6.2 | Instalación de cuello de ganzo | 1d | 2017-10-06 | 2017-10-07 | 87 | 0d |  | 80 |
| 89 | 5.6.3 | Instalación de Escalera de Gato | 1d | 2017-10-07 | 2017-10-08 | 88 | 0d |  | 315 |
| 90 | 5.6.4 | Instalación de estructura de soporte para techo de policarbonato | 11d | 2017-10-08 | 2017-10-19 | 89 | 0d |  | 2,459.16 |
| 91 | 5.6.5 | Instalación de baranda metalica | 9d | 2017-10-11 | 2017-10-20 | 90FS-8d | 0d |  | 1,509 |
| 92 | 5.6.6 | Instalación de Plataforma para Tanque Elevado | 5d | 2017-10-16 | 2017-10-21 | 91FS-4d | 0d |  | 741.98 |
| 93 | 5.6.7 | Instalación de Plataforma para Condensarores | 4d | 2017-10-18 | 2017-10-22 | 92FS-3d | 0d |  | 763.06 |
| 94 | 5.6.8 | Instalación rejillas metálicas para drenaje (Cto. Grupo Electrógeno, Ingreso) | 4d | 2017-10-19 | 2017-10-23 | 93FS-3d | 0d |  | 524.3 |
| 95 | 5.6.9 | Instalación de Puerta Cortafuego con barra Antipanico P4 de 1.20mts x 2.10mts | 1d | 2017-10-17 | 2017-10-18 | 94FS-6d | 0d |  | 350 |
| 96 | 5.6.10 | Instalación de Puerta Metálica P6 de 0.80mts x 2.10mts | 1d | 2017-10-18 | 2017-10-19 | 95 | 0d |  | 280 |
| 97 | 5.6.11 | Instalación de Puerta Cortafuergo Batiente Doble Hoja P7 de 1.50mts x 2.10mts | 1d | 2017-10-19 | 2017-10-20 | 96 | 0d |  | 400 |
| 98 | 5.6.12 | Instalación de concertina de D=0.45m | 7d | 2017-10-16 | 2017-10-23 | 97FS-4d | 0d |  | 961.35 |
| 99 | 5.6.13 | Suministro e instalación de Ventana, Marco de Aluminio + vidrio | 2d | 2017-10-19 | 2017-10-21 | 98FS-4d | 0d |  | 1,200 |
| 100 | 5.6.14 | Suministro e instalación de Rejilla de cobertura en fachada de aluminio | 1d | 2017-10-21 | 2017-10-22 | 99 | 0d |  | 420 |

| ID | WBS | Task | Duration | Start | Finish | Predecessors | Total slack | Free slack | Cost |
| --- | --- | --- | --- | --- | --- | --- | --- | --- | --- |
| 101 | 5.7 | **CARPINTERIA MADERA** | 4d | 2017-10-22 | 2017-10-26 |  | 0d |  | 1,100 |
| 102 | 5.7.1 | Suministro e Instalación de Puerta de Madera contraplacada P2 de 1.00mts x 2.10mts | 2d | 2017-10-22 | 2017-10-24 | 100 | 0d |  | 400 |
| 103 | 5.7.2 | Suministro e Instalación de Puerta de Madera contraplacada P3 de 0.90mts x 2.10mts | 2d | 2017-10-24 | 2017-10-26 | 102 | 0d |  | 700 |
| 104 | 5.8 | **VIDRIOS / POLICARBONATO** | 12d | 2017-10-16 | 2017-10-28 |  | 0d |  | 5,657.35 |
| 105 | 5.8.1 | Suministro e instalacion de mampara de vidrio de 10mm para sala de reuniones y oficina | 11d | 2017-10-16 | 2017-10-27 | 103FS-10d | 0d |  | 1,630.2 |
| 106 | 5.8.2 | Suministro e instalacion de cobertura de Policarbonato Opaco | 11d | 2017-10-17 | 2017-10-28 | 105FS-10d | 0d |  | 2,597.4 |
| 107 | 5.8.3 | Suministro e instalacion de cobertura de Policarbonato Traslucido | 8d | 2017-10-20 | 2017-10-28 | 106FS-8d | 0d |  | 1,429.75 |
| 108 | 5.9 | **OTROS** | 32d | 2017-09-24 | 2017-10-26 |  | 2d |  | 17,010.67 |
| 109 | 5.9.1 | Suministro e instalacion de ladrillo pastelero | 4d | 2017-09-24 | 2017-09-28 | 40, 44 | 28d | 0d | 5,232.32 |
| 110 | 5.9.2 | Suministro e Instalac. Sika Fleese para impermeabilizacion | 4d | 2017-09-25 | 2017-09-29 | 109FS-3d | 28d | 1d | 2,943.18 |
| 111 | 5.9.3 | Suministro e Instalac. Sika flix Techo 3 para impermeabilizacion, aplicación según detalle en planos | 4d | 2017-09-27 | 2017-10-01 | 110FS-3d, 46 | 27d | 11d | 1,798.61 |
| 112 | 5.9.4 | Suministro e instalacion de canaleta p/evacuación de aguas de lluvia de PVC d=4" con accesorios | 3d | 2017-10-20 | 2017-10-23 | 107FS-8d | 0d |  | 986.04 |
| 113 | 5.9.5 | Barandas de Seguridad para discapacitados | 1d | 2017-10-23 | 2017-10-24 | 112 | 0d |  | 520 |
| 114 | 5.9.6 | Suministro e instalación de separador de urinario de melamine para SSHH 60x1.2 | 1d | 2017-10-24 | 2017-10-25 | 113 | 0d |  | 80 |
| 115 | 5.9.7 | Suministro e instalación de division de melamine para SSHH (Paño fijo y puerta batiente ) | 2d | 2017-10-24 | 2017-10-26 | 114FS-1d | 0d |  | 350 |
| 116 | 5.9.8 | Suministro y aplicación de impermeabilizante para Muro impermur | 9d | 2017-09-30 | 2017-10-09 | 67SS | 16d | 0d | 4,333.18 |
| 117 | 5.9.9 | Acabado media caña para drenaje bajo piso tecnico | 3d | 2017-10-09 | 2017-10-12 | 116, 111FF | 16d |  | 767.34 |
| 118 | 5.10 | **SEGURIDAD** | 2d | 2017-10-26 | 2017-10-28 |  | 0d |  | 3,760 |
| 119 | 5.10.1 | Suministro e instalacion de (extintores CO2, PQS,Luz de emergencia, Señaleticas,Botiquin,luminaria d señalizacion | 2d | 2017-10-26 | 2017-10-28 | 115 | 0d |  | 3,760 |
| 120 | 6 | **INSTALACIONES SANITARIAS** | 45d | 2017-09-08 | 2017-10-23 |  | 5d |  | 11,064.57 |
| 121 | 6.1 | **APARATOS Y ACCESORIOS SANITARIOS** | 3d | 2017-10-20 | 2017-10-23 |  | 5d |  | 1,190 |
| 122 | 6.1.1 | Suministro e Instalación de inodoro | 1d | 2017-10-20 | 2017-10-21 | 119FS-8d | 5d | 0d | 500 |
| 123 | 6.1.2 | Suministro e Instalación de lavatorio | 1d | 2017-10-21 | 2017-10-22 | 122 | 5d | 0d | 400 |
| 124 | 6.1.3 | Suministro e Instalación de Urinario | 1d | 2017-10-22 | 2017-10-23 | 123 | 5d | 0d | 290 |

| ID | WBS | Task | Duration | Start | Finish | Predecessors | Total slack | Free slack | Cost |
| --- | --- | --- | --- | --- | --- | --- | --- | --- | --- |
| 125 | 6.2 | **REDES SANITARIAS** | 45d | 2017-09-08 | 2017-10-23 |  | 5d |  | 5,881.57 |
| 126 | 6.2.1 | Red de agua fria, desague y ventilacion | 45d | 2017-09-08 | 2017-10-23 | 62SS+5d, 124FF | 5d | 0d | 5,881.57 |
| 127 | 6.3 | **ACCESORIOS SANITARIOS** | 39d | 2017-09-13 | 2017-10-22 |  | 6d |  | 1,593 |
| 128 | 6.3.1 | Accesorios de agua fria, desague, caja de registro, caja de valvulas | 39d | 2017-09-13 | 2017-10-22 | 126FS-40d | 6d |  | 1,593 |
| 129 | 6.4 | **SISTEMA DE TANQUE ELEVADO** | 7d | 2017-10-08 | 2017-10-15 |  | 13d |  | 1,800 |
| 130 | 6.4.1 | Suministro e instalacion de Bomba Presurizadora 1 HP | 3d | 2017-10-08 | 2017-10-11 | 68 | 13d | 0d | 1,200 |
| 131 | 6.4.2 | Suministro e Instalacion de sitema de Tanque Elevado 750 LT | 4d | 2017-10-11 | 2017-10-15 | 130 | 13d | 0d | 600 |
| 132 | 6.5 | **SISTEMA DE DRENAJE DEBAJO DE PISO TECNICA** | 6d | 2017-10-01 | 2017-10-07 |  | 21d |  | 600 |
| 133 | 6.5.1 | Construccion de Pozo de Percolacion para drenaje de aguas bajo el piso tecnico | 6d | 2017-10-01 | 2017-10-07 | 131FS-14d | 21d |  | 600 |
| 134 | 7 | **INSTALACIONES ELECTRICAS** | 53d | 2017-08-30 | 2017-10-22 |  | 6d |  | 24,803.6 |
| 135 | 7.1 | **Tableros** | 42d | 2017-08-30 | 2017-10-11 |  | 17d |  | 2,161.41 |
| 136 | 7.1.1 | Suministro e Instalación de (Tubería 100, 75, 50, 40, 35, 25,mm∅PVC-P para canalización) | 42d | 2017-08-30 | 2017-10-11 | 36SS+4d | 17d |  | 2,161.41 |
| 137 | 7.2 | **Iluminacion** | 26d | 2017-09-26 | 2017-10-22 |  | 6d |  | 3,379.01 |
| 138 | 7.2.1 | Suministro e Instalación de cable para alumbrado 1x4 mm2 NHX-90 | 13d | 2017-09-27 | 2017-10-10 | 46 | 6d | 0d | 2,481.15 |
| 139 | 7.2.2 | Suministro e Instalación de Tubería 20mm∅PVC-P para canalización incluido cajas de pase y accesorios | 13d | 2017-09-26 | 2017-10-09 | 138FS-14d | 6d | 0d | 472.8 |
| 140 | 7.2.3 | Suministro e instalacion de (Luminarias Tipo Ras-M,Braquete, AHR, Lampara para adosar) | 10d | 2017-10-09 | 2017-10-19 | 139 | 6d | 0d | 80.18 |
| 141 | 7.2.4 | Suministro e instalacion Luces de emergencia | 2d | 2017-10-19 | 2017-10-21 | 140 | 6d | 0d | 110.88 |
| 142 | 7.2.5 | Suministro e Instalación de Interruptores (simples, Dobles, Triples, Conmutador) | 9d | 2017-10-13 | 2017-10-22 | 141FS-8d | 6d | 0d | 234 |
| 143 | 7.3 | **Tomacorrientes** | 22d | 2017-09-29 | 2017-10-21 |  | 7d |  | 10,810 |
| 144 | 7.3.1 | Suministro e Instalación de cable para tomacorriente 1x4 mm2 NHX-90 | 12d | 2017-09-30 | 2017-10-12 | 145FS-11d | 7d | 0d | 780 |
| 145 | 7.3.2 | Suministro e Instalación de (Tubería 20mm, 25,40∅PVC-P) para canalización incluido cajas de pase y accesorios | 12d | 2017-09-29 | 2017-10-11 | 142FS-23d | 7d | 0d | 1,575 |
| 146 | 7.3.3 | Suministro e instalación de tomacorrientes dobles comerciales con línea a tierra, bticino serie DOMINO AVANT | 5d | 2017-10-07 | 2017-10-12 | 144FS-5d | 7d | 0d | 880 |
| 147 | 7.3.4 | Salidas para Tomacorrientes Estabilizados Aterrados ((Incluye Tuberia, Cajas de pase pesadas, Cable, Caja Cuadrada y accesorios según plano) INDECO - PAVCO | 5d | 2017-10-08 | 2017-10-13 | 146FS-4d | 7d | 0d | 600 |
| 148 | 7.3.5 | Salida de fuerza para equipos de AA (Incluye Tuberia, Cajas de pase, Cable, según planos)INDECO - PAVCO | 8d | 2017-10-13 | 2017-10-21 | 147 | 7d | 0d | 1,575 |
| 149 | 7.3.6 | Salidas de pared para luces de emergencia incluye cable, tubería, Curvas y Accesorios | 3d | 2017-10-17 | 2017-10-20 | 148FS-4d | 8d | 6d | 5,400 |

| ID | WBS | Task | Type | Duration | Start | Finish | Predecessors | Total slack | Free slack | Cost |
| --- | --- | --- | --- | --- | --- | --- | --- | --- | --- | --- |
| 150 | 7.4 | **SPAT - Convencional** |  | 13d | 2017-09-23 | 2017-10-06 |  | 2d |  | 7,572.97 |
| 151 | 7.4.1 | Pozo a tierra con varilla de cobre de 3/4"x2.40m(Inc mano de obra y materiales) |  | 5d | 2017-09-23 | 2017-09-28 | 81SS-10d | 2d | 0d | 5,400 |
| 152 | 7.4.2 | Anillo de SPAT ( incluye: Instalación y suministro de cable desnudo de 50mm2 (Inc mano de obra, Barras y materiales) |  | 5d | 2017-09-25 | 2017-09-30 | 151FS-3d | 2d | 0d | 1,528.2 |
| 153 | 7.4.3 | Aterramiento (incluye: Instalación y suministro de cable forrado de 50mm2) |  | 6d | 2017-09-26 | 2017-10-02 | 152FS-4d | 2d | 0d | 435.2 |
| 154 | 7.4.4 | Aterramiento ( Incluye: cable Cu forrado 25mm2 (Inc mano de obra y materiales) |  | 6d | 2017-09-28 | 2017-10-04 | 153FS-4d | 2d | 0d | 177.75 |
| 155 | 7.4.5 | Aterramiento ( Incluye: cable Cu forrado 16mm2 (Inc mano de obra y materiales) |  | 6d | 2017-09-30 | 2017-10-06 | 154FS-4d | 2d | 0d | 31.82 |
| 156 | 7.5 | **VOZ Y DATOS** |  | 21d | 2017-09-21 | 2017-10-12 |  | 2d |  | 880.21 |
| 157 | 7.5.1 | Suministro e instalacion de tuberias para equipos de voz y datos. Tubería 35mm∅PVC-P |  | 21d | 2017-09-21 | 2017-10-12 | 155FS-15d | 2d | 0d | 880.21 |
| 158 | 8 | **DETECCION, INTRUSION Y CCTV** |  | 23d | 2017-09-22 | 2017-10-15 |  | 2d |  | 810.6 |
| 159 | 8.1 | Canalizaciones, entubado para Instalaciones de sistemas de seguridad (incluye colocacion de salidas y cajas pase) |  | 23d | 2017-09-22 | 2017-10-15 | 157FS-20d | 2d | 0d | 810.6 |
| 160 | 9 | **AIRE ACONDICIONADO** |  | 25d | 2017-09-27 | 2017-10-22 |  | 2d |  | 880.21 |
| 161 | 9.1 | Canalizaciones, entubado para Instalaciones de sistemas de AA (incluye colocacion de salidas y cajas pase) |  | 25d | 2017-09-27 | 2017-10-22 | 159FS-18d | 2d | 0d | 880.21 |
| 162 | 10 | **EXTERIOR** |  | 14d | 2017-10-12 | 2017-10-26 |  | 2d |  | 7,500 |
| 163 | 10.1 | Vereda y Señalizacion |  | 14d | 2017-10-12 | 2017-10-26 | 161FS-10d, 149FF | 2d |  | 7,500 |
| 164 | 11 | FIN DE OBRA | milestone | 0d | 2017-10-28 | 2017-10-28 | 107FF, 133FF, 128FF, 136FF, 57FF, 69FF, 79FF, 117FF, 20FF | 0d |  |  |
