# Proyecto Final

Schedule from MS Project, 2020-01-02 to 2020-08-03, costs in S.

## Calendars

- Proyecto Final: Mon-Sun 08:00-12:00, 13:00-17:00. Exceptions (off unless hours are given): 2020-04-09 to 2020-04-10 (Jueves y Viernes Santo), 2020-05-01 (Día de Trabajo), 2020-07-27 (Decretado por el Gobierno), 2020-07-28 to 2020-07-29 (Fiestas Patrias).

## Resources

| Resource | Unit | Rate |
| --- | --- | --- |
| Operador de maquinaria-equipo pesado |  | 25.57 |
| Capataz |  | 26.23 |
| Peon |  | 17.58 |
| Oficial |  | 19.46 |
| Operario |  | 24.58 |
| Pintura esmalte sintético | GAL | 60 |
| Dibujante |  | 21.87 |
| Papel-copia xeros tamaño A4 | UND | 0.1 |
| ALAMBRE NEGRO N° 8 | KG | 3.04 |
| Clavo c/cabeza para madera | KG | 3.18 |
| Madera para encofrado y carpintería | P2 | 5.8 |
| Piedra partida-grava de 1/2 - 3/4 | M3 | 54.15 |
| ARENA GRUESA | M3 | 42.37 |
| Cemento portland I | BLS | 18 |
| Cinta plástica para señal de seguridad de obra | M | 7.4 |
| Motobomba 5 HP de 2 |  | 6.34 |
| Camión cisterna 4x2 (agua) 122HP 1500gal |  | 117.93 |
| Camión volquete 4x2 140 - 210 HP 6m3 |  | 235.49 |
| SC Disposicion final de desmonte en centro de acopio autorizado |  |  |
| Disco de corte alto rendimiento, de D=18 a 20, para Eq. de Corte | UND | 380 |
| Agua | M3 | 10 |
| Cincel de corte-demolición para martillo neumático |  | 4.8 |
| Martillo neumático 21 - 24 kg |  | 4.82 |
| Compresora neumática 76 HP 125 - 175 pcm. |  | 74.66 |
| Camioneta pick-up 4x2 simple 1000 kg 90 HP |  | 55.02 |
| Cortadora de pavimento CAP: 13-35HP i/combustible |  | 30.2 |
| Pala |  | 22 |
| Pico |  | 47 |
| Compactadora vibrat. de plancha 7 HP |  | 33.37 |
| Cargador sob. llanta 80-95HP 1,5-1,75 Yd3 |  | 151.78 |
| Camión volquete 4x2 210 - 280 HP 8m3 |  | 235.49 |
| Anillo jebe p/tuber. PVC UF DN 150 mm | UND | 3.88 |
| Tubo de PVC UF 2 DN 150 mm | M | 12.77 |
| Lubricante para tuberia de unión flexible | GAL | 27.79 |
| Tapón de acero DN 200 mm |  | 175.89 |
| Tapón de acero DN 150 mm |  |  |
| Abrazadera de polietileno DN 200 x Salida 160mm para conex. Alcantarillado | UND | 60 |
| Codo de PVC UF 90° DN 150 mm | UND | 71.35 |
| Tapa concreto armado caja para desague de 0,30 m x 0,6 m | UND | 65 |
| Caja de concreto 0,30 m x 0,60 m para desagüe | UND | 36.73 |
| Cuerpo intermedio de 0,30x0,30x0,60 m p/caja concreto -CD | UND | 11.15 |
| ARENA FINA | M3 | 42.37 |
| Prueba: proctor modificado de campo | UND | 120 |
| Codo de PVC UF 45° DN 150 mm | UND | 23 |
| Compresora ne... |  |  |

## Schedule

| ID | WBS | Task | Type | Duration | Start | Finish | Predecessors | Total slack | Free slack | Resources | Work | Cost |
| --- | --- | --- | --- | --- | --- | --- | --- | --- | --- | --- | --- | --- |
| 1 | 1 | **CONEXIONES DOMICILIARIAS DE ALCANTARILLADO** |  | 208d | 2020-01-02 | 2020-08-03 |  | 0d |  |  | 22582.2h | 977,932.03 |
| 2 | 1.1 | **TRABAJOS PRELIMINARES** |  | 158d | 2020-01-02 | 2020-06-11 |  | 0d |  |  | 1075.04h | 46,137.31 |
| 3 | 1.1.1 | Trazo y replanteo inicial para conexión domiciliaria |  | 10d | 2020-01-02 | 2020-01-12 |  | 0d |  | Capataz [90%]; Operario; Pintura esmalte sintético [0.02 GAL] | 152h | 3,856.16 |
| 4 | 1.1.2 | Replanteo final de la obra para conexión domiciliaria |  | 7d | 2020-06-04 | 2020-06-11 | 16 | 50d | 0d | Capataz; Operario; Dibujante; Papel-copia xeros tamaño A4 [2 UND] | 168h | 4,070.28 |
| 5 | 1.1.3 | Proteccion de redes existentes |  | 120d | 2020-01-12 | 2020-05-14 | 3 | 68d |  | Capataz [8%]; Peon [8%]; Operario [8%]; ALAMBRE NEGRO N° 8 [82.5 KG]; Clavo c/cabeza para madera [0.75 KG]; Madera para encofrado y carpintería [30 P2] | 230.4h | 5,679.54 |
| 6 | 1.1.4 | Cinta plástica señalizadora para límite de seguridad de obra-SEDAPAL |  | 150d | 2020-01-02 | 2020-06-03 | 3SS | 48d |  | Capataz [2%]; Peon [2%]; Operario [2%]; Piedra partida-grava de 1/2 - 3/4 [11.92 M3]; ARENA GRUESA [11.92 M3]; Cemento portland I [23.84 BLS]; Madera para encofrado y carpintería [214.56 P2]; Cinta plástica para señal de seguridad de obra [2503.2 M] | 72h | 22,989.13 |
| 7 | 1.1.5 | Riego de zona de trabajo para mitigar la contaminación -polvo (con autorización de uso de grifo) |  | 138d | 2020-01-02 | 2020-05-22 | 3SS | 70d |  | Operador de maquinaria-equipo pesado [8%]; Capataz [8%]; Peon [16%]; Motobomba 5 HP de 2 [8%]; Camión cisterna 4x2 (agua) 122HP 1500gal [1%] | 452.64h | 9,542.2 |
| 8 | 1.1.6 | Trabajos Preliminares terminado | milestone | 0d | 2020-06-11 | 2020-06-11 | 4 | 50d |  |  |  |  |
| 9 | 1.2 | **DEMOLICIONES** |  | 120d | 2020-01-12 | 2020-05-14 | 3 | 50d |  |  | 3289.6h | 86,403.43 |
| 10 | 1.2.1 | Demolición de caja y tapa en mal estado, de conex. dom. desague (incl. acomodo del desmonte para su eliminación) |  | 50d | 2020-01-12 | 2020-03-02 |  | 50d | 0d | Capataz [8%]; Peon [16%] | 96h | 1,964.48 |
| 11 | 1.2.2 | Desmontaje y retiro de tuberia de concreto p/conexiion domiciliaria |  | 100d | 2020-01-13 | 2020-04-24 | 10SS+1d | 68d | 0d | Capataz [8%]; Peon [80%]; Operario [80%] | 1344h | 28,661.12 |
| 12 | 1.2.3 | Corte+rotura, ED y reposic. de pavimento flexible asfalto caliente de e= 2 |  | 100d | 2020-01-12 | 2020-04-23 | 10SS | 88d |  | Operador de maquinaria-equipo pesado [20%]; Capataz [20%]; Peon [20%]; Agua [34 M3]; Disco de corte alto rendimiento, de D=18 a 20, para Eq. de Corte [1 UND]; Cincel de corte-demolición para martillo neumático [8%]; Martillo neumático 21 - 24 kg [8%]; Compresora neumática 76 HP 125 - 175 pcm. [8%]; Camioneta pick-up 4x2 simple 1000 kg 90 HP [20%]; Cortadora de pavimento CAP: 13-35HP i/combustible [8%] | 896h | 27,950.72 |
| 13 | 1.2.4 | Corte+rotura, ED y reposic. De pavimento mixto: asfalto 2 y concreto 6 |  | 100d | 2020-01-12 | 2020-04-23 | 10SS | 88d |  | Operador de maquinaria-equipo pesado [20%]; Capataz [20%]; Peon [20%]; Agua [34 M3]; Disco de corte alto rendimiento, de D=18 a 20, para Eq. de Corte [1 UND]; Cincel de corte-demolición para martillo neumático [8%]; Martillo neumático 21 - 24 kg [8%]; Compresora ne... [8%]; Camioneta pick-up 4x2 simple 1000 kg 90 HP [20%]; Cortadora de pavimento CAP: 13-35HP i/combustible [8%] | 896h | 23,172.48 |
| 14 | 1.2.5 | Eliminación de desmonte R=20 km proveniente de demolicion de concreto a pulso (incl disposicion final - material no peligroso) |  | 10d | 2020-04-23 | 2020-05-14 | 11FS-1d | 68d | 0d | Capataz [8%]; Peon [32%]; Operador de maquinaria-equipo pesado [12%]; Camión volquete 4x2 140 - 210 HP 6m3 [20%]; SC Disposicion final de desmonte en centro de acopio autorizado [0.1%] | 57.6h | 4,654.63 |
| 15 | 1.2.6 | Demoliciones Terminado | milestone | 0d | 2020-05-14 | 2020-05-14 | 14 | 68d |  |  |  |  |
| 16 | 1.3 | **MOVIMIENTO DE TIERRAS** |  | 138d | 2020-01-15 | 2020-06-04 | 3 | 50d | 0d |  | 9515.2h | 263,820.9 |
| 17 | 1.3.1 | Excav. zanja (pulso) p/tub. terr-normal DN 100 - 150 de 0,60 m a 1,00 m prof. |  | 70d | 2020-01-15 | 2020-03-25 | 12SS+3d | 50d | 0d | Capataz [10%]; Peon [1000%]; Pala [1000%]; Pico [1000%] | 5656h | 100,606.88 |
| 18 | 1.3.2 | Excav. Zanja (pulso) p/tub. terr-normal DN 100 - 150 de 1,01 m a 1,25 m prof. |  | 20d | 2020-03-25 | 2020-04-16 | 17 | 50d | 0d | Peon [1000%]; Capataz [10%]; Pico [1000%]; Pala [1000%] | 1616h | 29,237.68 |
| 19 | 1.3.3 | Excav. zanja (pulso) p/tub. terr-normal DN 100 - 150 de 1,26 m a 1,50 m prof. |  | 4d | 2020-04-16 | 2020-04-20 | 18 | 50d | 0d | Peon [1000%]; Capataz [10%]; Pico [1000%]; Pala [1000%] | 323.2h | 6,399.54 |
| 20 | 1.3.4 | Relleno comp.zanja(pulso) p/tub t-normal DN 100 - 150 de 0,60 m a 1,00 m prof. |  | 30d | 2020-04-20 | 2020-05-21 | 19 | 50d | 0d | Operador de maquinaria-equipo pesado; Capataz; Peon [900%]; Agua [130 M3]; Compactadora vibrat. de plancha 7 HP; ARENA GRUESA [2000 M3] | 1920h | 127,576.8 |
| 21 | 1.3.5 | Relleno comp.zanja(pulso) p/tub t-normal DN 100 - 150 de 1,01 m a 1,25 m prof. |  | 10d | 2020-05-21 | 2020-05-31 | 20 | 50d | 0d |  |  |  |
| 22 | 1.3.6 | Relleno comp.zanja(pulso) p/tub t-normal DN 100 - 150 de 1,26 m a 1,50 m prof. |  | 2d | 2020-05-31 | 2020-06-02 | 21 | 50d | 0d |  |  |  |
| 23 | 1.3.7 | Elimin. desmonte(carg+v) t-normal D=20km p/tub. DN 100 - 150 para toda prof. |  | 2d | 2020-06-02 | 2020-06-04 | 22 | 50d | 0d |  |  |  |
| 24 | 1.3.8 | Movimiento de tierras Terminados | milestone | 0d | 2020-06-04 | 2020-06-04 | 23 | 50d |  |  |  |  |

| ID | WBS | Task | Type | Duration | Start | Finish | Predecessors | Total slack | Free slack | Resources | Work | Cost |
| --- | --- | --- | --- | --- | --- | --- | --- | --- | --- | --- | --- | --- |
| 25 | 1.4 | **SUMINISTRO E INSTALACION DE ELEMENTOS PARA CONEXIÓN DOMICILIARIA** |  | 198d | 2020-01-12 | 2020-08-03 | 3 | 0d |  |  | 8702.4h | 581,570.4 |
| 26 | 1.4.1 | **TUBERIAS** |  | 56d | 2020-01-12 | 2020-03-08 |  | 0d |  |  | 1984h | 237,453.28 |
| 27 | 1.4.1.1 | Tubería PVC-U UF NTP ISO 4435 SN 2 DN 150 (DNE 160) incl. anillo + 2% desperdicios |  | 6d | 2020-01-12 | 2020-01-18 |  | 0d |  | Anillo jebe p/tuber. PVC UF DN 150 mm [1013 UND]; Tubo de PVC UF 2 DN 150 mm [6079.2 M]; Lubricante para tuberia de unión flexible [59.6 GAL] |  | 83,218.11 |
| 28 | 1.4.1.2 | Instalación de tubería de PVC p/desagüe DN 150 (DNE 160) incluye prueba hidráulica |  | 20d | 2020-01-18 | 2020-02-07 | 27 | 0d |  | Capataz [20%]; Operario [200%]; Peon [400%]; Oficial [200%]; Agua [315.88 M3]; Tapón de acero DN 150 mm [1192%] | 1312h | 29,342.16 |
| 29 | 1.4.1.3 | Abrazadera de polietileno para conexión domiciliaria de alcantarillado DN 200 mm x 160mm - incluye codo de 45 |  | 2d | 2020-02-07 | 2020-02-09 | 28 | 0d |  | Abrazadera de polietileno DN 200 x Salida 160mm para conex. Alcantarillado [1321 UND]; Codo de PVC UF 45° DN 150 mm [1321 UND] |  | 109,643 |
| 30 | 1.4.1.4 | Abrazadera de polietileno para conexión domiciliaria de alcantarillado DN 200 mm x 160mm - incluye codo de 90 |  | 2d | 2020-02-07 | 2020-02-09 | 29SS | 18d | 0d | Abrazadera de polietileno DN 200 x Salida 160mm para conex. Alcantarillado [7 UND]; Codo de PVC UF 90° DN 150 mm [7 UND] |  | 919.45 |
| 31 | 1.4.1.5 | Instalación de abrazadera para red de HDPE DN 200 y salida a conexión domiciliaria de alcantarillado DN 160 |  | 30d | 2020-02-07 | 2020-03-08 | 29FS-2d | 0d |  | Capataz [10%]; Operario; Peon | 504h | 10,747.92 |
| 32 | 1.4.1.6 | Instalación de abrazadera para red de HDPE DN 250 y salida a conexión domiciliaria de alcantarillado DN 160 |  | 10d | 2020-02-09 | 2020-02-19 | 30 | 18d |  | Capataz [10%]; Operario; Peon | 168h | 3,582.64 |
| 33 | 1.4.1.7 | Tuberias Terminado | milestone | 0d | 2020-03-08 | 2020-03-08 | 31 | 0d |  |  |  |  |
| 34 | 1.4.2 | **CAJAS** |  | 102d | 2020-03-08 | 2020-06-21 | 26 | 0d |  |  | 5779.2h | 305,224.7 |
| 35 | 1.4.2.1 | Suministro de caja de concreto simple y tapa concreto armado de 0,30 m x 0,60 m (cajas a rehabilitar) |  | 2d | 2020-03-08 | 2020-03-10 |  | 0d |  | Tapa concreto armado caja para desague de 0,30 m x 0,6 m [1018 UND]; Caja de concreto 0,30 m x 0,60 m para desagüe [1018 UND] |  | 103,561.14 |
| 36 | 1.4.2.2 | Sumin. caja concreto simple y tapa conc ar. 0,30 x 0,60m; de 1,01-1,25m prof.(incl. caja más 2 cuerpos adic. de 0,30m) |  | 2d | 2020-03-08 | 2020-03-10 | 35SS | 100d | 0d | Tapa concreto armado caja para desague de 0,30 m x 0,6 m [233 UND]; Caja de concreto 0,30 m x 0,60 m para desagüe [233 UND]; Cuerpo intermedio de 0,30x0,30x0,60 m p/caja concreto -CD [466 UND] |  | 28,898.99 |
| 37 | 1.4.2.3 | Sumin. caja concreto simple y tapa conc ar. 0,30 x 0,60m; de 1,26-1,50m prof.(incl. caja más 3 cuerpos adic. de 0,30m) |  | 2d | 2020-03-08 | 2020-03-10 | 36SS | 100d |  | Tapa concreto armado caja para desague de 0,30 m x 0,6 m [27 UND]; Caja de concreto 0,30 m x 0,60 m para desagüe [27 UND]; Cuerpo intermedio de 0,30x0,30x0,60 m p/caja concreto -CD [81 UND] |  | 3,649.86 |
| 38 | 1.4.2.4 | Instalación de caja y tapa de registro de 0,30 m x 0,60 m en terreno normal |  | 100d | 2020-03-10 | 2020-06-21 | 35 | 0d |  | Operador de maquinaria-equipo pesado [25%]; Oficial [25%]; Capataz [10%]; Peon [375%]; Operario; ARENA FINA [2.04 M3]; Cemento portland I [22.4 BLS]; Camión volquete 4x2 140 - 210 HP 6m3 [25%] | 4480h | 131,096.03 |
| 39 | 1.4.2.5 | Instalación caja y tapa de registro 0,30 m x 0,60 m, de 1.01-1,25m prof. En t-normal (incl. Instalación de cuerpos adic) |  | 25d | 2020-03-10 | 2020-04-04 | 38SS | 75d | 0d | Operador de maquinaria-equipo pesado [25%]; Oficial [25%]; Capataz [10%]; Peon [375%]; Operario; ARENA FINA [0.5 M3]; Cemento portland I [5.83 BLS]; Camión volquete 4x2 140 - 210 HP 6m3 [25%] | 1120h | 32,777.72 |
| 40 | 1.4.2.6 | Instalación caja y tapa de registro 0,30 m x 0,60 m, de 1.26-1,50m prof. en t-normal (incl. instalación de cuerpos adic) |  | 4d | 2020-03-10 | 2020-03-14 | 39SS | 96d |  | Operador de maquinaria-equipo pesado [25%]; Oficial [25%]; Capataz [10%]; Peon [375%]; Operario; ARENA FINA [0.05 M3]; Cemento portland I [0.81 BLS]; Camión volquete 4x2 140 - 210 HP 6m3 [25%] | 179.2h | 5,240.95 |
| 41 | 1.4.2.7 | Cajas Terminado | milestone | 0d | 2020-06-21 | 2020-06-21 | 38 | 0d |  |  |  |  |
| 42 | 1.4.3 | **PRUEBAS** |  | 40d | 2020-06-21 | 2020-08-03 | 34, 41 | 0d |  |  | 939.2h | 38,892.42 |
| 43 | 1.4.3.1 | Prueba hidráulica a zanja tapada, de tubería p/desague DN 150 |  | 34d | 2020-06-21 | 2020-07-25 |  | 0d |  | Capataz [10%]; Operario; Peon; Oficial; Agua [315 M3]; Tapón de acero DN 150 mm [1200%] | 843.2h | 20,624.1 |
| 44 | 1.4.3.2 | Prueba de compactación de suelos (procto modif densidad campo) |  | 6d | 2020-07-25 | 2020-08-03 | 43 | 0d |  | Operador de maquinaria-equipo pesado; Prueba: proctor modificado de campo [120 UND]; Camioneta pick-up 4x2 simple 1000 kg 90 HP | 96h | 18,268.32 |
| 45 | 1.4.3.3 | Pruebas Terminado | milestone | 0d | 2020-07-25 | 2020-07-25 | 43 | 6d |  |  |  |  |
