# MANTENIMIENTO TURBINA VAPOR MS PROJECT

Schedule from MS Project, 2020-04-01 to 2020-04-20, costs in S.

## Calendars

- MANTENIMIENTO TV: Mon-Fri 09:00-13:00, 14:00-18:00; Sat-Sun off. Exceptions (off unless hours are given): 2020-04-09 (JUEVES SANTO), 2020-04-10 (VIERNES SANTO).

## Resources

| Resource | Rate |
| --- | --- |
| LUIS ALIAGA | 20 |
| BALBIN JEAN | 20 |
| MAMANI VENTURA | 20 |
| CONTRATISTA BGS | 40 |
| CONTRATISTA HRGNS | 40 |
| CONTRATISTA BRTS | 20 |
| JUAN RAMIREZ | 6 |
| JOSE BUIZA | 6 |
| DARIO GUEVARA | 6 |
| JUAN MENDES | 20 |
| MANUAL ROSALE | 20 |
| CHNT | 40 |
| NNN | 40 |
| HHH | 40 |
| MARIO VELARDE | 20 |
| ENRIQUE PERES | 20 |

## Schedule

| ID | WBS | Task | Type | Duration | Start | Finish | Predecessors | Total slack | Free slack | Resources | Work | Cost |
| --- | --- | --- | --- | --- | --- | --- | --- | --- | --- | --- | --- | --- |
| 1 | 1 | **MANTENIMIENTO ANNUAL TV & AUXILIARES DE VAPOR** |  | 11.38d? | 2020-04-01 09:00 | 2020-04-20 12:00 |  | 0d |  |  | 804h | 20,332 |
| 2 | 1.1 | INICIO DEL MANTENIMIENTO | milestone | 0d | 2020-04-01 09:00 | 2020-04-01 09:00 |  | 0d |  | MAMANI VENTURA |  |  |
| 3 | 1.2 | **MANTENIMIENTO INSPECCIÓN MENOR TV - SOPORTE ENS** |  | 5d | 2020-04-01 09:00 | 2020-04-07 18:00 | 2 | 0d |  |  | 120h | 2,640 |
| 4 | 1.2.1 | Preparativos parte eléctrica: alimentaciones temporales, tomas industriales e iluminación |  | 5d | 2020-04-01 09:00 | 2020-04-07 18:00 |  | 0d |  | BALBIN JEAN; CONTRATISTA BGS; JOSE BUIZA | 120h | 2,640 |
| 5 | 1.3 | **MANTENIMIENTO 1A GENERADOR TV** |  | 6.38d | 2020-04-08 09:00 | 2020-04-20 12:00 | 4 | 0d |  |  | 310h | 6,958 |
| 6 | 1.3.1 | Verificación de Consigna TV (Generador) |  | 3h | 2020-04-08 09:00 | 2020-04-08 12:00 |  | 0d |  | LUIS ALIAGA; JUAN RAMIREZ | 6h | 78 |
| 7 | 1.3.2 | Montaje/Desmontaje de andamios |  | 6d | 2020-04-08 12:00 | 2020-04-20 12:00 | 6 | 0d |  | MAMANI VENTURA; CONTRATISTA HRGNS; JUAN RAMIREZ | 144h | 3,168 |
| 8 | 1.3.3 | 1A Inspección de slip rings excitatríz |  | 2d | 2020-04-14 12:00 | 2020-04-16 12:00 | 7SS+2d | 0d |  | CONTRATISTA HRGNS; MAMANI VENTURA | 32h | 960 |
| 9 | 1.3.4 | Inspección y/o reemplazo de escobillas shaft ground |  | 2d | 2020-04-16 12:00 | 2020-04-20 12:00 | 8 | 0d |  | CONTRATISTA HRGNS; BALBIN JEAN | 32h | 960 |
| 10 | 1.3.5 | 1A Inspección de transformador del neutro de generador |  | 1d | 2020-04-16 12:00 | 2020-04-17 12:00 | 9SS | 1d | 0d | CONTRATISTA HRGNS; MAMANI VENTURA | 16h | 480 |
| 11 | 1.3.6 | 1A Cambio de filtros del generador |  | 1d | 2020-04-16 12:00 | 2020-04-17 12:00 | 10SS | 1d |  | LUIS ALIAGA; CONTRATISTA HRGNS | 16h | 480 |
| 12 | 1.3.7 | **Mantto. 1A ( Preservación y limpieza) Secador de PLC Hidrogeno** |  | 2d | 2020-04-08 09:00 | 2020-04-13 18:00 |  | 4.38d |  |  | 64h | 832 |
| 13 | 1.3.7.1 | Mantto 1A Analizador de H2 |  | 2d | 2020-04-08 09:00 | 2020-04-13 18:00 |  | 4.38d |  | CONTRATISTA BRTS; JOSE BUIZA | 32h | 416 |
| 14 | 1.3.7.2 | Mantenimiento y/o cambio de trampa de Hidrogeno TV |  | 2d | 2020-04-08 09:00 | 2020-04-13 18:00 |  | 4.38d |  | CONTRATISTA BRTS; JOSE BUIZA | 32h | 416 |
| 15 | 1.4 | **MANTTO 1A CELDA D10,PT,CT_TV SE Chilca** |  | 4d | 2020-04-01 09:00 | 2020-04-06 18:00 |  | 7.38d |  |  | 96h | 2,336 |
| 16 | 1.4.1 | Verificación de Consigna e Instalación Tierras Temporales |  | 1d | 2020-04-01 09:00 | 2020-04-01 18:00 |  | 7.38d | 0d | MARIO VELARDE; CONTRATISTA BRTS | 16h | 320 |
| 17 | 1.4.2 | Prueba de hermeticidad de tableros de equipos de patio |  | 1d | 2020-04-02 09:00 | 2020-04-02 18:00 | 16 | 7.38d | 0d | CONTRATISTA BRTS; MARIO VELARDE | 16h | 320 |
| 18 | 1.4.3 | Mantenimiento Mecánico de Equipos de Patio |  | 2d | 2020-04-02 09:00 | 2020-04-03 18:00 | 17SS | 7.38d | 0d | NNN; ENRIQUE PERES | 32h | 960 |
| 19 | 1.4.4 | Reparación de puntos calientes |  | 2d | 2020-04-03 09:00 | 2020-04-06 18:00 | 18FS-1d | 7.38d |  | JUAN RAMIREZ; CONTRATISTA HRGNS | 32h | 736 |
| 20 | 1.5 | **MANTTO 1A DE TRAFO EXCITACIÓN TV CC** |  | 0.88d | 2020-04-01 09:00 | 2020-04-01 17:00 |  | 10.5d |  |  |  |  |
| 21 | 1.5.1 | Verificación de Consigna e Intalación Tierras Temporales |  | 2h | 2020-04-01 09:00 | 2020-04-01 11:00 |  | 10.5d | 0d |  |  |  |
| 22 | 1.5.2 | Mantenimiento transformador Excitación SES |  | 5h | 2020-04-01 11:00 | 2020-04-01 17:00 | 21 | 10.5d |  |  |  |  |
| 23 | 1.6 | MANTTO 1A BREAKER GENERADOR 52G |  | 4d | 2020-04-01 09:00 | 2020-04-06 18:00 |  | 7.38d |  |  |  |  |
| 24 | 1.7 | MANTTO 1A DE IPB DE TV |  | 5d | 2020-04-01 09:00 | 2020-04-07 18:00 |  | 6.38d | 0d |  |  |  |
| 25 | 1.8 | MANTTO SIST EXCITACIÓN EX2100 |  | 2d | 2020-04-03 09:00 | 2020-04-06 18:00 | 24SS+2d | 6.38d | 0d |  |  |  |
| 26 | 1.9 | MANTTO 1A SIST CONTR INCENDIO TV |  | 3d | 2020-04-03 09:00 | 2020-04-07 18:00 | 25SS | 6.38d |  |  |  |  |

| ID | WBS | Task | Type | Duration | Start | Finish | Predecessors | Total slack | Free slack | Constraint | Resources | Work | Cost |
| --- | --- | --- | --- | --- | --- | --- | --- | --- | --- | --- | --- | --- | --- |
| 27 | 1.10 | **MTTO 1A CARGADO Y BATERIA SWITCH GEAR TV** |  | 9d? | 2020-04-01 09:00 | 2020-04-15 18:00 |  | 2.38d |  |  |  | 160h | 4,800 |
| 28 | 1.10.1 | 1A Voltajes individuales de cada celda de baterias de Banco de Baterias |  | 1d? | 2020-04-01 09:00 | 2020-04-01 18:00 |  | 2.38d | 0d |  | CHNT; MANUAL ROSALE | 16h | 480 |
| 29 | 1.10.2 | 1A Temperaturas individuales de cada celda de baterias de Banco de Baterias |  | 3d | 2020-04-01 09:00 | 2020-04-03 18:00 | 28SS | 2.38d | 0d |  | MANUAL ROSALE; CHNT | 48h | 1,440 |
| 30 | 1.10.3 | 1A Prueba de descarga Bateria de Banco de Baterias |  | 6d | 2020-04-06 09:00 | 2020-04-15 18:00 | 29 | 2.38d |  |  | CHNT; JUAN MENDES | 96h | 2,880 |
| 31 | 1.11 | **MANTTO 1A SISTEMA LUBRICACIÓN TV** |  | 2.88d | 2020-04-06 09:00 | 2020-04-08 17:00 |  | 5.5d |  |  | HHH [200%]; MARIO VELARDE | 118h | 3,598 |
| 32 | 1.11.1 | Cambio de filtros de aceite lubricación |  | 4h | 2020-04-06 09:00 | 2020-04-06 13:00 |  | 6d | 0.5d | start no earlier than 2020-04-06 09:00 | HHH; DARIO GUEVARA | 8h | 184 |
| 33 | 1.11.2 | Cambio de filtros de Tanque Separador de aceite Vahos |  | 2h | 2020-04-07 09:00 | 2020-04-07 11:00 | 32 | 5.5d | 0d | start no earlier than 2020-04-07 09:00 | HHH; DARIO GUEVARA | 4h | 92 |
| 34 | 1.11.3 | Cambio de filtros duplex de lub oil |  | 2h | 2020-04-07 11:00 | 2020-04-07 13:00 | 33 | 5.5d | 0d | start no earlier than 2020-04-07 09:00 | HHH; DARIO GUEVARA | 4h | 92 |
| 35 | 1.11.4 | Cambio filtros acondiconador aceite |  | 2h | 2020-04-07 14:00 | 2020-04-07 16:00 | 34 | 5.5d | 0d | start no earlier than 2020-04-07 09:00 | HHH; DARIO GUEVARA | 4h | 92 |
| 36 | 1.11.5 | Limpieza de enfriadores |  | 2h | 2020-04-07 16:00 | 2020-04-07 18:00 | 35 | 5.5d | 0d | start no earlier than 2020-04-07 09:00 | HHH; DARIO GUEVARA | 4h | 92 |
| 37 | 1.11.6 | extracción de muestra de aceite |  | 1h | 2020-04-08 09:00 | 2020-04-08 10:00 | 36 | 5.5d | 0d | start no earlier than 2020-04-07 09:00 | HHH; DARIO GUEVARA | 2h | 46 |
| 38 | 1.11.7 | Calibración de SW/ TX/Manómetros |  | 6h | 2020-04-08 10:00 | 2020-04-08 17:00 | 37 | 5.5d |  | start no earlier than 2020-04-07 09:00 | LUIS ALIAGA | 6h | 120 |
| 39 | 1.11.8 | Verificación de indicador de nivel de aceite |  | 4h | 2020-04-07 16:00 | 2020-04-08 11:00 | 36SS | 6.12d |  | start no earlier than 2020-04-07 09:00 | HHH; ENRIQUE PERES | 8h | 240 |
| 40 | 1.11.9 | Reemplazo de rodamientos motor extractor de Vahos-2 |  | 1d | 2020-04-07 16:00 | 2020-04-08 16:00 | 36SS | 5.62d | 0d | start no earlier than 2020-04-07 09:00 | MANUAL ROSALE; NNN | 16h | 480 |
| 41 | 1.11.10 | FIN DEL MANTEBNIMIENTO | milestone | 0d | 2020-04-08 16:00 | 2020-04-08 16:00 | 40 | 5.62d |  |  |  |  |  |
