# Expansión de Suite 101

Schedule from MS Project, 2013-01-15 to 2013-04-18, costs in $, A marks actual dates.
GS XXI
attended Orange Belt on Jan 25 & 26, 2001, in New York City

## Calendars

- Standard: Mon-Fri 08:00-12:00, 13:00-17:00; Sat-Sun off. Exceptions (off unless hours are given): 2013-04-06 08:00-12:00, 13:00-17:00.

## Resources

| Resource | Rate |
| --- | --- |
| Empleados | 35 |
| Cia. De mudanza | 30 |
| WE'RE | 50 |
| Pintores | 40 |
| Carpinteros | 40 |
| Esteban T | 50 |
| Susana R | 50 |
| Sandra P | 30 |
| Roberto R | 50 |
| Rogelio S | 40 |
| Miguel W | 50 |
| Proveedor de cableado | 50 |
| Vendedor del sistema telefonico | 40 |
| Teknion |  |
| Proveedor de muebles |  |
| Red | 40 |
| Cerrajero | 50 |
| Instaladores de muebles | 40 |
| EGA (Arquitecto) | 150 |
| Alfombra | 8000 |
| Muebles | 24000 |
| Azulejo de alfombra | 10000 |
| Equipo de seguridad y cerraduras | 3500 |

## Schedule

| ID | WBS | Task | Type | Duration | Start | Finish | Predecessors | Complete | Remaining | Actual start | Actual finish | Baseline start | Baseline finish | Baseline duration | Total slack | Free slack | Resources | Work | Actual work | Cost | Baseline cost | Actual cost |
| --- | --- | --- | --- | --- | --- | --- | --- | --- | --- | --- | --- | --- | --- | --- | --- | --- | --- | --- | --- | --- | --- | --- |
| 1 | 1 | **REQUERIMIENTOS** |  | 38.5d | 2013-01-15 A | 2013-03-08 |  | 100% |  |  | 2013-03-07 | 2013-01-15 | 2013-03-08 | 38.5d |  |  |  | 66.27h | 66.27h | 5,259.33 | 5,724.33 | 5,259.33 |
| 2 | 1.1 | Disponer de opciones para el nuevo plan de piso |  | 5d | 2013-01-15 A | 2013-01-21 A |  | 100% |  |  |  | 2013-01-15 | 2013-01-21 | 5d |  |  | Esteban T [10.4%]; Sandra P [10%] | 4.17h | 4.17h | 208.33 | 208.33 | 208.33 |
| 3 | 1.2 | Redactar el acta con el arquitecto |  | 5d | 2013-01-22 A | 2013-01-28 A | 2 | 100% |  |  |  | 2013-01-22 | 2013-01-28 | 5d |  |  | Sandra P [10%]; EGA (Arquitecto) [50%] | 24h | 24h | 3,120 | 3,120 | 3,120 |
| 4 | 1.3 | Revisar el plan de piso con el gerente |  | 5d | 2013-01-29 A | 2013-02-04 A | 3 | 100% |  |  |  | 2013-01-29 | 2013-02-04 | 5d |  |  | Susana R [10%]; Esteban T [10%]; Sandra P [10%]; Roberto R [10%] | 16h | 16h | 720 | 720 | 720 |
| 5 | 1.4 | Determinar diseños de mueble |  | 8d | 2013-02-19 A | 2013-02-28 A | 21 | 100% |  |  |  | 2013-02-19 | 2013-02-28 | 8d |  |  | Esteban T [5%]; Sandra P [5%]; EGA (Arquitecto) [5%] | 9.6h | 9.6h | 736 | 736 | 736 |
| 6 | 1.5 | Determinar plan de asientos preliminares |  | 5d | 2013-02-28 A | 2013-03-07 A | 5 | 100% |  |  |  | 2013-03-01 | 2013-03-07 | 5d |  |  | Susana R [25%] | 1h | 1h | 50 | 500 | 50 |
| 7 | 1.6 | **Determinar otros requerimientos** |  | 10d | 2013-02-19 A | 2013-03-04 A |  | 100% |  |  |  | 2013-02-19 | 2013-03-04 | 10d |  |  |  | 11.5h | 11.5h | 425 | 440 | 425 |
| 8 | 1.6.1 | Teléfono |  | 1d | 2013-02-28 A | 2013-03-01 A | 5 | 100% |  |  |  | 2013-03-01 | 2013-03-01 | 1d |  |  | Sandra P [25%] | 2h | 2h | 60 | 60 | 60 |
| 9 | 1.6.2 | Red inalámbrica |  | 1d | 2013-02-28 A | 2013-03-01 A | 5 | 100% |  |  |  | 2013-03-01 | 2013-03-01 | 1d |  |  | Esteban T [25%] | 2h | 2h | 100 | 100 | 100 |
| 10 | 1.6.3 | Electricidad |  | 2d | 2013-02-28 A | 2013-03-04 A | 5 | 100% |  |  |  | 2013-03-01 | 2013-03-04 | 2d |  |  | Sandra P [25%] | 3.5h | 3.5h | 105 | 120 | 105 |
| 11 | 1.6.4 | Seguridad |  | 2d | 2013-02-19 A | 2013-02-20 A | 21 | 100% |  |  |  | 2013-02-19 | 2013-02-20 | 2d |  |  | Rogelio S [25%] | 4h | 4h | 160 | 160 | 160 |
| 12 | 2 | **ESTIMADOS Y OPCIONES** |  | 0d | 2013-01-21 A | 2013-01-21 |  | 94% | 0d |  |  | 2013-01-21 | 2013-01-21 | 0d |  |  |  | 26.6h | 24.5h | 918 | 924 | 855 |
| 13 | 2.1 | **Conseguir estimaciones primarias** |  | 0d | 2013-01-21 | 2013-01-21 |  | 96% | 0d | 2013-02-05 |  | 2013-01-21 | 2013-01-21 | 0d |  |  |  | 17.6h | 16.5h | 568 | 574 | 535 |
| 14 | 2.1.1 | Obtener estimaciones para las opciones de planta |  | 5d | 2013-02-05 A | 2013-02-11 A | 4 | 100% |  |  |  | 2013-02-05 | 2013-02-11 | 5d |  |  | Sandra P [7.5%] | 3h | 3h | 90 | 90 | 90 |
| 15 | 2.1.2 | Conseguir estimados para pintado |  | 10d | 2013-02-05 A | 2013-02-18 A | 4 | 100% |  |  |  | 2013-02-05 | 2013-02-18 | 10d |  |  | Sandra P [3.8%] | 3h | 3h | 90 | 90 | 90 |
| 16 | 2.1.3 | Conseguir estimaciones para alfombrado |  | 10d | 2013-02-05 A | 2013-02-18 A | 4 | 100% |  |  |  | 2013-02-05 | 2013-02-18 | 10d |  |  | Sandra P [3.8%] | 3h | 3h | 90 | 90 | 90 |
| 17 | 2.1.4 | Conseguir cotizaciones para cerraduras y sistemas de seguridad |  | 5d | 2013-02-21 A | 2013-02-27 A | 11 | 100% |  |  |  | 2013-02-21 | 2013-02-27 | 5d |  |  | Rogelio S [10%] | 4h | 4h | 160 | 160 | 160 |
| 18 | 2.1.5 | Coseguir estimaciones para cableado |  | 3d | 2013-03-01 A | 2013-03-06 | 8, 9 | 50% | 1.5d |  |  | 2013-03-04 | 2013-03-06 | 3d | -33d | 0d | Sandra P [10%] | 2.4h | 1.3h | 72 | 72 | 39 |
| 19 | 2.1.6 | Conseguir estimaciones para electricidad |  | 3d | 2013-03-04 A | 2013-03-07 A | 10 | 100% |  |  |  | 2013-03-05 | 2013-03-07 | 3d |  |  | Sandra P [10%] | 2.2h | 2.2h | 66 | 72 | 66 |
| 20 | 2.2 | Seleccionar opciones para el plan de piso |  | 5d | 2013-02-12 A | 2013-02-18 A | 14 | 100% |  |  |  | 2013-02-12 | 2013-02-18 | 5d |  |  | Esteban T [5%] | 2h | 2h | 100 | 100 | 100 |
| 21 | 2.3 | Finalizar plan de piso |  | 0.5d | 2013-02-19 A | 2013-02-19 A | 20 | 100% |  |  |  | 2013-02-19 | 2013-02-19 | 0.5d |  |  | Sandra P [50%]; Esteban T [50%] | 4h | 4h | 160 | 160 | 160 |
| 22 | 2.4 | Decisión: Si usar proveedores de afuera para pintado y alfombrado | milestone | 0d | 2013-02-16 A | 2013-02-16 A | 14, 15, 16 | 100% |  |  |  | 2013-02-16 | 2013-02-16 | 0d |  |  | Esteban T |  |  |  |  |  |
| 23 | 2.5 | Seleccionar Instalador de alfombras |  | 1d | 2013-02-26 A | 2013-02-26 A | 22 | 100% |  |  |  | 2013-02-26 | 2013-02-26 | 1d |  |  | Sandra P [12.5%] | 1h | 1h | 30 | 30 | 30 |
| 24 | 2.6 | Seleccionar pintor |  | 1d | 2013-02-19 A | 2013-02-19 A | 22 | 100% |  |  |  | 2013-02-19 | 2013-02-19 | 1d |  |  | Sandra P [12.5%] | 1h | 1h | 30 | 30 | 30 |
| 25 | 2.7 | Seleccionar proveedor de cable |  | 1d | 2013-03-06 | 2013-03-07 | 18 |  |  |  |  | 2013-03-07 | 2013-03-07 | 1d | -33d | 0d | Sandra P [12.5%] | 1h |  | 30 | 30 |  |

| ID | WBS | Task | Type | Duration | Start | Finish | Predecessors | Complete | Remaining | Baseline start | Baseline finish | Baseline duration | Total slack | Free slack | Constraint | Resources | Work | Actual work | Cost | Baseline cost | Actual cost |
| --- | --- | --- | --- | --- | --- | --- | --- | --- | --- | --- | --- | --- | --- | --- | --- | --- | --- | --- | --- | --- | --- |
| 26 | 3 | **RENOVACIÓN DE CONTRATACIONES Y ADQUISICiONES** |  | 10d | 2013-02-22 A | 2013-03-07 |  | 56% | 4.42d | 2013-02-22 | 2013-03-07 | 10d |  |  |  |  | 20.18h | 7.1h | 22,305.25 | 22,348 | 233 |
| 27 | 3.1 | Finalizar estimaciones de construcción |  | 6d | 2013-02-22 A | 2013-03-01 A | 21, 22FS+3d | 100% |  | 2013-02-22 | 2013-03-01 | 6d |  |  |  | Sandra P [7.5%] | 3.6h | 3.6h | 108 | 108 | 108 |
| 28 | 3.2 | Firmar contrato de construcción |  | 1d | 2013-03-02 A | 2013-03-04 | 27 |  | 1d | 2013-03-04 | 2013-03-04 | 1d | 3d | 0.12d |  | Roberto R | 8h |  | 400 | 400 |  |
| 29 | 3.3 | Finalizar contrato de alfombrado |  | 1d | 2013-03-05 A | 2013-03-05 A | 23, 28 | 100% |  | 2013-03-05 | 2013-03-05 | 1d |  |  |  | Sandra P [12.5%] | 0.75h | 0.75h | 22.5 | 30 | 22.5 |
| 30 | 3.4 | Finalizar contrato de pintado |  | 1d | 2013-03-05 A | 2013-03-05 A | 24, 28 | 100% |  | 2013-03-05 | 2013-03-05 | 1d |  |  |  | Sandra P [12.5%] | 0.75h | 0.75h | 22.5 | 30 | 22.5 |
| 31 | 3.5 | Finalizar contrato de cableado |  | 1d | 2013-03-07 | 2013-03-08 | 25 |  |  | 2013-03-08 | 2013-03-08 | 1d | -1d | 0d |  | Sandra P [12.5%] | 1h |  | 30 | 30 |  |
| 32 | 3.6 | Finalizar contrato eléctrico |  | 1d | 2013-03-07 | 2013-03-08 | 19 |  |  | 2013-03-08 | 2013-03-08 | 1d | -1d | 0d |  | Sandra P [12.5%] | 0.07h |  | 2.25 | 30 |  |
| 33 | 3.7 | Seleccionar cerrajero |  | 1d | 2013-02-28 A | 2013-02-28 A | 17 | 100% |  | 2013-02-28 | 2013-02-28 | 1d |  |  |  | Rogelio S [25%] | 2h | 2h | 80 | 80 | 80 |
| 34 | 3.8 | Ordenar cerraduras y equipo de seguridad |  | 2d | 2013-02-27 | 2013-03-01 | 17 |  |  | 2013-02-28 | 2013-03-01 | 2d | -21.12d | 0d |  | Rogelio S [12.5%] | 2h |  | 80 | 80 |  |
| 35 | 3.9 | Revisar cerraduras y equipos de seguridad |  | 1h | 2013-04-06 | 2013-04-06 | 34FS+25d |  |  | 2013-04-06 | 2013-04-06 | 1h | -21.12d | 0d |  | Equipo de seguridad y cerraduras |  |  | 3,500 | 3,500 |  |
| 36 | 3.10 | Ordenar alfombras y azulejos |  | 2d | 2013-03-05 | 2013-03-07 | 29 |  |  | 2013-03-06 | 2013-03-07 | 2d | -20d | 0d |  | Sandra P [12.5%]; Alfombra; Azulejo de alfombra | 2h |  | 18,060 | 18,060 |  |
| 37 | 3.11 | Recibir alfombras | milestone | 0d | 2013-03-28 | 2013-03-28 | 36FS+15d |  |  | 2013-03-28 | 2013-03-28 | 0d | -15d | 0d |  |  |  |  |  |  |  |
| 38 | 3.12 | Recibir azulejos | milestone | 0d | 2013-04-04 | 2013-04-04 | 36FS+20d |  |  | 2013-04-04 | 2013-04-04 | 0d | -20d | 0d |  |  |  |  |  |  |  |
| 39 | 4 | **CONSTRUCCIÓN** |  | 22.88d | 2013-03-12 | 2013-04-10 |  |  |  | 2013-03-12 | 2013-04-10 | 23d | 3.12d |  |  |  | 664h |  | 31,680 | 31,680 |  |
| 40 | 4.1 | **Reconstruir suite** |  | 19.88d | 2013-03-12 | 2013-04-06 |  |  |  | 2013-03-12 | 2013-04-06 | 20d | 2d |  |  |  | 480h |  | 24,000 | 24,000 |  |
| 41 | 4.1.1 | Demolición de paredes |  | 5d | 2013-03-12 | 2013-03-18 | 28FS+5d |  |  | 2013-03-12 | 2013-03-18 | 5d | 17d | 0d | start no earlier than 2013-03-12 | WE'RE [300%] | 120h |  | 6,000 | 6,000 |  |
| 42 | 4.1.2 | Construir nuevas paredes |  | 5d | 2013-03-19 | 2013-03-25 |  |  |  | 2013-03-19 | 2013-03-25 | 5d | 0d |  | start no earlier than 2013-03-19 | WE'RE [300%] | 120h |  | 6,000 | 6,000 |  |
| 43 | 4.1.3 | Instalar la electricidad y luces |  | 5d | 2013-03-26 | 2013-04-01 | 42, 32 |  |  | 2013-03-26 | 2013-04-01 | 5d | 0d |  |  | WE'RE [300%] | 120h |  | 6,000 | 6,000 |  |
| 44 | 4.1.4 | Finalizar trabajo y limpieza |  | 5d | 2013-04-02 | 2013-04-06 | 43 |  |  | 2013-04-02 | 2013-04-06 | 5d | 0d |  |  | WE'RE [300%] | 120h |  | 6,000 | 6,000 |  |
| 45 | 4.1.5 | Reconstrucción completa | milestone | 0d | 2013-04-06 | 2013-04-06 | 44 |  |  | 2013-04-06 | 2013-04-06 | 0d | 0d |  |  |  |  |  |  |  |  |
| 46 | 4.2 | Pintado |  | 3d | 2013-04-06 | 2013-04-09 | 30, 45FS-1d |  |  | 2013-04-06 | 2013-04-09 | 3d | 0d |  |  | Pintores [300%] | 72h |  | 2,880 | 2,880 |  |
| 47 | 4.3 | Instalación de alfombra |  | 1d | 2013-04-09 | 2013-04-09 | 46FS-1d, 37 |  |  | 2013-04-09 | 2013-04-09 | 1d | 0d |  |  | Carpinteros [400%] | 32h |  | 1,280 | 1,280 |  |
| 48 | 4.4 | Instalación de azulejo |  | 1d | 2013-04-10 | 2013-04-10 | 46, 38 |  |  | 2013-04-10 | 2013-04-10 | 1d | 2d | 0d |  | Carpinteros [400%] | 32h |  | 1,280 | 1,280 |  |
| 49 | 4.5 | Instalación de cable para red |  | 2d | 2013-03-19 | 2013-03-20 | 41, 31 |  |  | 2013-03-19 | 2013-03-20 | 2d | 17d | 16d |  | Proveedor de cableado | 16h |  | 800 | 800 |  |
| 50 | 4.6 | Instalación de cable pata teléfono |  | 2d | 2013-03-19 | 2013-03-20 | 41, 31 |  |  | 2013-03-19 | 2013-03-20 | 2d | 17d | 16d |  | Vendedor del sistema telefonico | 16h |  | 640 | 640 |  |
| 51 | 4.7 | Instalación de cerraduras y equipo de seguridad |  | 2d | 2013-04-06 | 2013-04-09 | 35, 33 |  |  | 2013-04-06 | 2013-04-09 | 2d | 4.75d | 1.75d | start no earlier than 2013-04-06 | Cerrajero | 16h |  | 800 | 800 |  |
| 52 | 4.8 | Construccion completa | milestone | 0d | 2013-04-10 | 2013-04-10 | 48, 49, 50, 51 |  |  | 2013-04-10 | 2013-04-10 | 0d | 3.12d |  |  |  |  |  |  |  |  |

| ID | WBS | Task | Type | Duration | Start | Finish | Predecessors | Complete | Remaining | Baseline start | Baseline finish | Baseline duration | Total slack | Free slack | Deadline | Resources | Work | Actual work | Cost | Baseline cost | Actual cost |
| --- | --- | --- | --- | --- | --- | --- | --- | --- | --- | --- | --- | --- | --- | --- | --- | --- | --- | --- | --- | --- | --- |
| 53 | 5 | **MOBILIARIO** |  | 34d | 2013-02-28 | 2013-04-16 |  |  |  | 2013-03-01 | 2013-04-16 | 34d | 0.12d |  |  |  | 195h |  | 32,010 | 32,040 |  |
| 54 | 5.1 | Reunión con técnico |  | 2h | 2013-02-28 | 2013-03-01 | 5 |  |  | 2013-03-01 | 2013-03-01 | 2h | 4.88d | 0d |  | Sandra P | 1h |  | 30 | 60 |  |
| 55 | 5.2 | Seleccionar mobiliario |  | 2d | 2013-03-01 | 2013-03-05 | 54 |  |  | 2013-03-01 | 2013-03-05 | 2d | 4.88d | 0d |  | Susana R [25%]; Sandra P [25%] | 8h |  | 320 | 320 |  |
| 56 | 5.3 | Ordenar mobiliario |  | 2d | 2013-03-05 | 2013-03-07 | 55 |  |  | 2013-03-05 | 2013-03-07 | 2d | 4.88d | 0d |  | Sandra P [12.5%]; Muebles | 2h |  | 24,060 | 24,060 |  |
| 57 | 5.4 | Recibir mobiliario | milestone | 0d | 2013-04-04 | 2013-04-04 | 56FS+20d |  |  | 2013-04-04 | 2013-04-04 | 0d | 4.88d | 0d |  |  |  |  |  |  |  |
| 58 | 5.5 | **Instalación de mobiliario** |  | 4.88d | 2013-04-10 | 2013-04-16 |  |  |  | 2013-04-10 | 2013-04-16 | 5d | 0d |  |  |  | 160h |  | 6,400 | 6,400 |  |
| 59 | 5.5.1 | área alfombrada |  | 3d | 2013-04-10 | 2013-04-12 | 47, 57 |  |  | 2013-04-10 | 2013-04-12 | 3d | 0d |  |  | Instaladores de muebles [400%] | 96h |  | 3,840 | 3,840 |  |
| 60 | 5.5.2 | Área con azulejos |  | 2d | 2013-04-15 | 2013-04-16 | 48, 57, 59 |  |  | 2013-04-15 | 2013-04-16 | 2d | 0d |  |  | Instaladores de muebles [400%] | 64h |  | 2,560 | 2,560 |  |
| 61 | 5.6 | Instalación de mobiliario eléctrico y cables |  | 3d | 2013-04-11 | 2013-04-16 | 58SS+1d, 49, 50 |  |  | 2013-04-11 | 2013-04-15 | 3d | 0.88d | 0d |  | Proveedor de cableado | 24h |  | 1,200 | 1,200 |  |
| 62 | 5.7 | Suite lista para su ocupación | milestone | 0d | 2013-04-16 | 2013-04-16 | 61, 60 |  |  | 2013-04-16 | 2013-04-16 | 0d | 0.12d |  |  |  |  |  |  |  |  |
| 63 | 6 | **MUDANZA** |  | 31d | 2013-03-07 A | 2013-04-18 |  | 14% | 26.61d | 2013-03-08 | 2013-04-18 | 31d | 0d |  |  |  | 466h | 16h | 16,360 | 16,360 | 640 |
| 64 | 6.1 | **Preparación para la mudanza** |  | 30.12d | 2013-03-07 A | 2013-04-18 |  | 18% | 24.71d | 2013-03-08 | 2013-04-17 | 30d | 0.88d |  |  |  | 42h | 16h | 1,640 | 1,640 | 640 |
| 65 | 6.1.1 | Finalizar plan de asientos |  | 3d | 2013-03-07 | 2013-03-12 | 6 |  |  | 2013-03-08 | 2013-03-12 | 3d | 25d | 0d |  | Susana R [12.5%] | 3h |  | 150 | 150 |  |
| 66 | 6.1.2 | Comprar cajas |  | 1h | 2013-03-07 | 2013-03-08 | 65SS |  |  | 2013-03-08 | 2013-03-08 | 1h | 29d |  |  | Sandra P | 1h |  | 30 | 30 |  |
| 67 | 6.1.3 | Preparar cronograma de mudanza para los empleados |  | 1d | 2013-04-04 | 2013-04-05 | 57, 65 |  |  | 2013-04-04 | 2013-04-05 | 1d | 8.75d | 7.88d |  | Sandra P [37.5%] | 3h |  | 90 | 90 |  |
| 68 | 6.1.4 | Contratar agencia de mudanza |  | 3d | 2013-03-07 | 2013-03-12 | 65SS |  |  | 2013-03-08 | 2013-03-12 | 3d | 26.12d |  |  | Sandra P [12.5%] | 3h |  | 90 | 90 |  |
| 69 | 6.1.5 | Programar conecciones telefónicas |  | 2d | 2013-04-16 | 2013-04-18 | 67, 61 |  |  | 2013-04-16 | 2013-04-17 | 2d | 0.88d |  |  | Vendedor del sistema telefonico | 16h |  | 640 | 640 |  |
| 70 | 6.1.6 | Establecer conecciones de red |  | 2d | 2013-04-16 A | 2013-04-17 A | 67, 61 | 100% |  | 2013-04-16 | 2013-04-17 | 2d |  |  |  | Red | 16h | 16h | 640 | 640 | 640 |
| 71 | 6.2 | Empaquetar |  | 1d | 2013-04-16 | 2013-04-16 | 53FS-1d, 51FS-1d, 52 |  |  | 2013-04-16 | 2013-04-16 | 1d | 0d |  |  | Empleados [2500%] | 200h |  | 7,000 | 7,000 |  |
| 72 | 6.3 | Mudanza |  | 1d | 2013-04-17 | 2013-04-17 | 71, 66, 67, 68, 62 |  |  | 2013-04-17 | 2013-04-17 | 1d | 0d |  |  | Cia. De mudanza [300%] | 24h |  | 720 | 720 |  |
| 73 | 6.4 | Desempaquetar |  | 1d | 2013-04-18 | 2013-04-18 | 72 |  |  | 2013-04-18 | 2013-04-18 | 1d | 0d |  |  | Empleados [2500%] | 200h |  | 7,000 | 7,000 |  |
| 74 | 7 | EXPANSIÓN COMPLETA | milestone | 0d | 2013-04-18 | 2013-04-18 | 73, 69, 70 |  |  | 2013-04-18 | 2013-04-18 | 0d | 0d |  | 2013-04-19 |  |  |  |  |  |  |
