# Establecer la Oficina de Proyectos automatizada - SEGUIMIENTO

Schedule from MS Project, 2013-10-02 to 2013-12-20, costs in $, A marks actual dates.
Linda Lawlor Consulting
Costs do NOT include software or licenses. / The 'Gate' in this project was at the Training Phase. If the client was unable to or did not agree to the recommendation that they do their own training the Train-the-Trainers course would have been eliminated. The PM Consultant/Trainer would have performed all the training. Possibly still in two phases - Phase I would have been attended by a Pilot user group rather than the internal trainers.

## Calendars

- Standard: Mon-Fri 08:00-12:00, 13:00-17:00; Sat-Sun off.

## Resources

| Resource | Group | Rate |
| --- | --- | --- |
| Firma conratante | External | 62.5 |
| Cliente | Internal | 33.65 |
| Consultor / Entrenador de la Oficina de Proyectos | External | 93.75 |
| Todo el personal | Internal | 24.04 |

## Schedule

| ID | WBS | Task | Type | Duration | Start | Finish | Predecessors | Complete | Remaining | Baseline start | Baseline finish | Baseline duration | Total slack | Constraint | Resources | Work | Actual work | Cost | Baseline cost | Actual cost | Text27 | Text29 |
| --- | --- | --- | --- | --- | --- | --- | --- | --- | --- | --- | --- | --- | --- | --- | --- | --- | --- | --- | --- | --- | --- | --- |
| 1 | 1 | **INICIACIÓN** |  | 0.5d | 2013-10-02 A | 2013-10-02 A |  | 100% |  | 2013-10-02 | 2013-10-02 | 0.5d |  |  |  | 24h | 24h | 1,403.85 | 1,403.85 | 1,403.85 | Linda Lawlor | AV |
| 2 | 1.1 | Reunión y discusión sobre los requisitos de los clientes |  | 4h | 2013-10-02 A | 2013-10-02 A |  | 100% |  | 2013-10-02 | 2013-10-02 | 4h |  |  | Firma conratante; Cliente [300%]; Consultor / Entrenador de la Oficina de Proyectos | 20h | 20h | 1,028.85 | 1,028.85 | 1,028.85 | Linda Lawlor | AV |
| 3 | 1.2 | Resumen de requisitos, calendario y costos |  | 4h | 2013-10-02 A | 2013-10-02 A | 2 | 100% |  | 2013-10-02 | 2013-10-02 | 4h |  |  | Consultor / Entrenador de la Oficina de Proyectos | 4h | 4h | 375 | 375 | 375 | Linda Lawlor | AV |
| 4 | 1.3 | Contrato negociado | milestone | 0d | 2013-10-02 A | 2013-10-02 A | 3 | 100% |  | 2013-10-02 | 2013-10-02 | 0d |  |  |  |  |  |  |  |  | Linda Lawlor | AV |
| 5 | 2 | **ANÁLISIS DE NECESIDADES** |  | 1.12d | 2013-10-03 A | 2013-10-04 A |  | 100% |  | 2013-10-03 | 2013-10-04 | 1.12d |  |  |  | 12h | 12h | 944.71 | 944.71 | 944.71 | Linda Lawlor | AV |
| 6 | 2.1 | Detallar requisitos y recomendaciones |  | 1d | 2013-10-03 A | 2013-10-03 A | 4 | 100% |  | 2013-10-03 | 2013-10-03 | 1d |  |  | Consultor / Entrenador de la Oficina de Proyectos | 8h | 8h | 750 | 750 | 750 | Linda Lawlor | AV |
| 7 | 2.2 | Presentar al cliente |  | 1h | 2013-10-04 A | 2013-10-04 A | 6 | 100% |  | 2013-10-04 | 2013-10-04 | 1h |  |  | Cliente [300%]; Consultor / Entrenador de la Oficina de Proyectos | 4h | 4h | 194.71 | 194.71 | 194.71 | Linda Lawlor | AV |
| 8 | 2.3 | Aceptación del cliente | milestone | 0d | 2013-10-04 A | 2013-10-04 A | 7 | 100% |  | 2013-10-04 | 2013-10-04 | 0d |  |  | Firma conratante; Cliente; Consultor / Entrenador de la Oficina de Proyectos |  |  |  |  |  | Linda Lawlor | AV |
| 9 | 3 | **CONTROL DEL MARCO DE TRABAJO** |  | 2d | 2013-10-11 A | 2013-10-14 A |  | 100% |  | 2013-10-11 | 2013-10-14 | 2d |  |  |  | 55h | 55h | 2,954.33 | 2,954.33 | 2,954.33 | Linda Lawlor | AV |
| 10 | 3.1 | Facilitar las normas de sesión |  | 7h | 2013-10-11 A | 2013-10-11 A | 8 | 100% |  | 2013-10-11 | 2013-10-11 | 7h |  | must start on 2000-10-11 | Firma conratante; Cliente [300%]; Consultor / Entrenador de la Oficina de Proyectos | 35h | 35h | 1,800.48 | 1,800.48 | 1,800.48 | Linda Lawlor | AV |
| 11 | 3.2 | Elaborar y presentar el documento de control del marco de trabajo |  | 1d | 2013-10-12 A | 2013-10-14 A | 10 | 100% |  | 2013-10-12 | 2013-10-14 | 1d |  |  | Consultor / Entrenador de la Oficina de Proyectos | 8h | 8h | 750 | 750 | 750 | Linda Lawlor | AV |
| 12 | 3.3 | Revisión y retroalimentación del cliente |  | 0.5d | 2013-10-13 A | 2013-10-14 A | 11 | 100% |  | 2013-10-13 | 2013-10-14 | 0.5d |  |  | Cliente [300%] | 12h | 12h | 403.85 | 403.85 | 403.85 | Linda Lawlor | AV |
| 13 | 3.4 | Aprobación del cliente | milestone | 0d | 2013-10-13 A | 2013-10-13 A | 12FS+0.5d | 100% |  | 2013-10-13 | 2013-10-13 | 0d |  |  |  |  |  |  |  |  | Linda Lawlor | AV |
| 14 | 4 | **ENTRENAR - Fase I - personal de ejecución** |  | 2d | 2013-10-16 A | 2013-10-18 A |  | 100% |  | 2013-10-16 | 2013-10-18 | 2d |  |  |  | 58h | 58h | 2,883.17 | 2,883.17 | 2,883.17 | Linda Lawlor | AV |
| 15 | 4.1 | Capacitar a los entrenadores |  | 2d | 2013-10-16 A | 2013-10-17 A | 13 | 100% |  | 2013-10-16 | 2013-10-17 | 2d |  | must start on 2000-10-16 | Consultor / Entrenador de la Oficina de Proyectos [75%]; Cliente [275%] | 56h | 56h | 2,755.77 | 2,755.77 | 2,755.77 | Linda Lawlor | AV |
| 16 | 4.2 | Actualizar el material didáctico de entrenamiento |  | 0.5d | 2013-10-17 A | 2013-10-17 A | 15FF | 100% |  | 2013-10-17 | 2013-10-17 | 0.5d |  |  | Cliente [25%]; Consultor / Entrenador de la Oficina de Proyectos [25%] | 2h | 2h | 127.4 | 127.4 | 127.4 | Linda Lawlor | AV |
| 17 | 4.3 | Certificar a los entrenadores | milestone | 0d | 2013-10-18 A | 2013-10-18 A | 16 | 100% |  | 2013-10-18 | 2013-10-18 | 0d |  |  |  |  |  |  |  |  | Linda Lawlor | AV |
| 18 | 5 | **PROYECTO PILOTO** |  | 22d | 2013-10-23 A | 2013-11-22 |  | 23% | 16.92d | 2013-10-23 | 2013-11-22 | 22d | 20d |  |  | 104h | 24h | 9,269.23 | 9,269.23 | 1,769.23 | Linda Lawlor | AV |
| 19 | 5.1 | Configurar la unidad compartida |  | 1d | 2013-10-23 A | 2013-10-23 A | 17 | 100% |  | 2013-10-23 | 2013-10-23 | 1d |  |  | Cliente | 8h | 8h | 269.23 | 269.23 | 269.23 | Linda Lawlor | AV |
| 20 | 5.2 | Desarrollar plantillas |  | 1d | 2013-10-24 A | 2013-10-24 A | 19 | 100% |  | 2013-10-24 | 2013-10-24 | 1d |  |  | Consultor / Entrenador de la Oficina de Proyectos | 8h | 8h | 750 | 750 | 750 | Linda Lawlor | AV |
| 21 | 5.3 | Crear un fondo de Recursos |  | 1d | 2013-10-25 A | 2013-10-25 A | 20 | 100% |  | 2013-10-25 | 2013-10-25 | 1d |  |  | Consultor / Entrenador de la Oficina de Proyectos | 8h | 8h | 750 | 750 | 750 | Linda Lawlor | AV |
| 22 | 5.4 | Desarrollar y vincular los proyectos al fondo de recursos |  | 1w | 2013-10-28 | 2013-11-01 | 21 |  |  | 2013-10-26 | 2013-11-01 | 1w | 34d |  | Consultor / Entrenador de la Oficina de Proyectos | 40h |  | 3,750 | 3,750 |  | Linda Lawlor | AV |
| 23 | 5.5 | Examinar la configuración |  | 1w | 2013-11-04 | 2013-11-08 | 21 |  |  | 2013-11-02 | 2013-11-08 | 1w | 29d |  | Consultor / Entrenador de la Oficina de Proyectos | 40h |  | 3,750 | 3,750 |  | Linda Lawlor | AV |
| 24 | 5.6 | Aprobación del proyecto piloto | milestone | 0d | 2013-11-22 A | 2013-11-22 A | 23 | 100% |  | 2013-11-22 | 2013-11-22 | 0d |  |  |  |  |  |  |  |  | Linda Lawlor | AV |

Notes:
- 10: The constraint date is to accommodate the trainer and one key implementation staff member's availability.
- 11: This document is intended to be used as a dynamic tool throughout the project. All customization, troubleshooting and solutions will be detailed and presented as an 'Automated Project Office Administrator's Reference Guide' as part of the project closing report.
- 15: Includes support staff & LAN Administrator / 3 student manuals for Level I @ $25 each = $75 / 3 student manuals for Level II @ $25 each = $75 / Fixed Cost total $150 / The constraint date is due to the new trainers' requirement to be functional by the following Monday for the launch of the corporate-wide training sessions.
- 16: It was agreed that the Training Material be updated as part of the train-the-trainer's course. The 3 implementation staff attending the course were to start delivering the course corporate-wide the following week. Any standards/options/templates agreed upon were to be added to the courseware.
- 20: incorporating standards developed

| ID | WBS | Task | Type | Duration | Start | Finish | Predecessors | Complete | Remaining | Baseline start | Baseline finish | Baseline duration | Total slack | Free slack | Constraint | Resources | Work | Actual work | Cost | Baseline cost | Actual cost | Text27 | Text29 |
| --- | --- | --- | --- | --- | --- | --- | --- | --- | --- | --- | --- | --- | --- | --- | --- | --- | --- | --- | --- | --- | --- | --- | --- |
| 25 | 6 | **ENTRENAMIENTO- FASE II - A nivel corporativo** |  | 16d | 2013-11-06 A | 2013-11-27 |  | 99% | 0d | 2013-11-06 | 2013-11-27 | 16d | 3d |  |  |  | 552h | 552h | 20,330.76 | 20,330.76 | 20,330.77 | Linda Lawlor | AV |
| 26 | 6.1 | Nivel actual I |  | 1w | 2013-11-06 A | 2013-11-12 A | 24 | 100% |  | 2013-11-06 | 2013-11-12 | 1w |  |  | must start on 2000-11-06 | Cliente [300%]; Todo el personal [4800%] | 184h | 184h | 6,776.92 | 6,776.92 | 6,776.92 | Linda Lawlor | AV |
| 27 | 6.2 | Nivel actual II |  | 1w | 2013-11-14 A | 2013-11-20 A | 26 | 100% |  | 2013-11-14 | 2013-11-20 | 1w |  |  |  | Cliente [300%]; Todo el personal [4800%] | 184h | 184h | 6,776.92 | 6,776.92 | 6,776.92 | Linda Lawlor | AV |
| 28 | 6.3 | Nivel actuall III |  | 1w | 2013-11-21 A | 2013-11-27 A | 27 | 100% |  | 2013-11-21 | 2013-11-27 | 1w |  |  |  | Cliente [300%]; Todo el personal [4800%] | 184h | 184h | 6,776.92 | 6,776.92 | 6,776.92 | Linda Lawlor | AV |
| 29 | 6.4 | Entenamiento completado | milestone | 0d | 2013-11-27 | 2013-11-27 | 28 |  |  | 2013-11-27 | 2013-11-27 | 0d | 3d | 0d |  |  |  |  |  |  |  | Linda Lawlor | AV |
| 30 | 7 | **DESPLIEGUE CORPORATIVO** |  | 6d | 2013-12-05 | 2013-12-12 |  |  |  | 2013-12-05 | 2013-12-12 | 6d | 3d |  |  |  | 84h |  | 4,048.08 | 4,048.08 |  | Linda Lawlor | AV |
| 31 | 7.1 | **Proyectos Individuales** |  | 6d | 2013-12-05 | 2013-12-12 |  |  |  | 2013-12-05 | 2013-12-12 | 6d | 3d |  |  |  | 84h |  | 4,048.08 | 4,048.08 |  | Linda Lawlor | AV |
| 32 | 7.1.1 | Asesorar la optimización y el desarrollo de Proyectos |  | 1w | 2013-12-05 | 2013-12-11 | 29FS+1w |  |  | 2013-12-05 | 2013-12-11 | 1w | 3d | 0d |  | Todo el personal [4800%]; Consultor / Entrenador de la Oficina de Proyectos [50%] | 60h |  | 2,836.54 | 2,836.54 |  | Linda Lawlor | AV |
| 33 | 7.1.2 | Añadir Proyectos a la unidad compartida |  | 0.5d | 2013-12-12 | 2013-12-12 | 32 |  |  | 2013-12-12 | 2013-12-12 | 0.5d | 3d | 0d |  | Cliente; Todo el personal [4800%]; Consultor / Entrenador de la Oficina de Proyectos | 12h |  | 605.77 | 605.77 |  | Linda Lawlor | AV |
| 34 | 7.1.3 | Vincular proyectos al fondo de recursos |  | 0.5d | 2013-12-12 | 2013-12-12 | 33 |  |  | 2013-12-12 | 2013-12-12 | 0.5d | 3d | 0d |  | Todo el personal [4800%]; Cliente; Consultor / Entrenador de la Oficina de Proyectos | 12h |  | 605.77 | 605.77 |  | Linda Lawlor | AV |
| 35 | 7.1.4 | Proyectos en línea | milestone | 0d | 2013-12-12 | 2013-12-12 | 34 |  |  | 2013-12-12 | 2013-12-12 | 0d | 5d |  |  |  |  |  |  |  |  | Linda Lawlor | AV |
| 36 | 8 | Operaciones automáticas OFICINA DE PROYECTOS | milestone | 0d | 2013-12-12 | 2013-12-12 | 34 |  |  | 2013-12-12 | 2013-12-12 | 0d | 3d | 0d |  |  |  |  |  |  |  | Linda Lawlor | AV |
| 37 | 9 | **CIERRE DE PROYECTO** |  | 5d | 2013-12-13 | 2013-12-20 | 36 |  |  | 2013-12-13 | 2013-12-20 | 5d | 0d |  |  |  | 16h |  | 1,500 | 1,500 |  | Linda Lawlor | AV |
| 38 | 9.1 | Lecciones aprendidas |  | 1d | 2013-12-13 | 2013-12-13 |  |  |  | 2013-12-13 | 2013-12-13 | 1d | 3d | 0d |  | Consultor / Entrenador de la Oficina de Proyectos | 8h |  | 750 | 750 |  | Linda Lawlor | AV |
| 39 | 9.2 | Reporte final |  | 1d | 2013-12-16 | 2013-12-16 | 38 |  |  | 2013-12-16 | 2013-12-16 | 1d | 3d |  |  | Consultor / Entrenador de la Oficina de Proyectos | 8h |  | 750 | 750 |  | Linda Lawlor | AV |
| 40 | 9.3 | Cierre de sesión del cliente | milestone | 0d | 2013-12-20 | 2013-12-20 | 39 |  |  | 2013-12-20 | 2013-12-20 | 0d | 0d |  | start no earlier than 2013-12-20 | Cliente |  |  |  |  |  | Linda Lawlor | AV |

Notes:
- 25: Incorporates: / ·Templates developed including Standards / ·Resource Pool / ·Shared Drive Set-up
- 26: 48 Training Manuals @ $25 per manual / Fixed Cost total $1200
- 27: 48 Training Manuals @ $25 per manual / Fixed Cost total $1200
- 28: 48 Training Manuals @ $25 per manual / Fixed Cost total $1200
- 32: 1 week lag will give all a chance to digest the training and apply newfound skills to their own projects before on-site mentoring begins.
- 39: To include: / ·'Automated Project Office - Administrator's Reference Guide' - see WBS 3.2. / ·detailing - 'What's been done' / ·Data Management - shared drive information / ·hyperlinked folders for 'How To - Tips & Tricks' / ·consultant's e-mail address for post set-up support
